# ENETK TOTAL WORK

Schedule from MS Project XML, 2026-05-05 to 2030-12-31, A marks actual dates.

## Calendars

- Standard: Mon-Fri 08:00-12:00, 13:00-17:00; Sat-Sun off.

## Resources

| Resource |
| --- |
| KYLE MERRILL |
| SETH PETERSON |
| BRUCE SPENCER |
| LOREN MCCRAY |
| RAMI DOURI |
| COLE KADRMAS |
| KOLINA SCHANTZ |
| AMOS M |
| DUSTIN HOWE |
| JACKSON KING |
| TRUCK 5855 |
| TRUCK 1212 |
| TRUCK #3 |
| TRUCK #4 |
| TRUCK #5 |
| TRUCK #6 |
| Chasyn Ystaas |
| TRUCK 2249 ANOS |
| Josh Casivant |
| Jerry Karsky |
| CHARLIE WYNN |
| Chad Ystaas |
| 4 |

## Schedule

| ID | WBS | Task | Type | Duration | Start | Finish | Predecessors | Complete | Remaining | Total slack | Free slack | Constraint | Resources | Work | Actual work |
| --- | --- | --- | --- | --- | --- | --- | --- | --- | --- | --- | --- | --- | --- | --- | --- |
| 3 | 1 | **SOGC Work** |  | 36.68d? | 2026-05-07 08:00 A | 2026-12-31 17:00 |  | 13% | 149.46d? |  |  |  |  | 254h | 96.12h |
| 4 | 1.1 | **Sinclair State 2-36** |  | 2d? | 2026-05-07 08:00 | 2026-05-30 17:00 |  |  |  |  |  |  |  | 16h |  |
| 5 | 1.1.1 | replace PV 800 Screen |  | 4h | 2026-05-14 08:00 | 2026-05-14 12:00 |  |  |  | 270d | 0d | start no earlier than 2026-05-14 08:00 | COLE KADRMAS | 4h |  |
| 6 | 1.1.2 | Program PV 800 SCREEN |  | 8h? | 2026-05-14 13:00 | 2026-05-15 12:00 | 5 |  |  | 270d | 0d | start no earlier than 2026-05-07 08:00 | SETH PETERSON | 8h |  |
| 7 | 1.1.3 | WIRE PV 800 SCREEN |  | 4h | 2026-05-15 13:00 | 2026-05-15 17:00 | 6 |  |  | 270d |  | start no earlier than 2026-05-07 08:00 | COLE KADRMAS | 4h |  |
| 8 | 1.2 | **Porcupine Hovden SWT Skid** |  | 12.86d? | 2026-05-12 13:34 | 2026-05-29 11:25 |  |  |  | 260.57d |  |  |  | 33h |  |
| 9 | 1.2.1 | 4 remaining forks expecting delivery MAY 22nd DustinHowe to Inventory and coordinate with Seth P |  | 2h? | 2026-05-22 15:00 | 2026-05-22 17:00 |  |  |  | 265d |  | finish no earlier than 2026-05-22 17:00 | DUSTIN HOWE | 2h |  |
| 10 | 1.2.2 | Tuning forks need programmed to SD PUMPs |  | 1h? | 2026-05-25 16:00 | 2026-05-25 17:00 |  |  |  | 264d |  | finish no earlier than 2026-05-25 17:00 | COLE KADRMAS | 1h |  |
| 11 | 1.2.3 | wire tuning forks |  | 3.43h? | 2026-05-12 13:34 | 2026-05-12 17:00 |  |  |  | 273d |  | finish no earlier than 2026-05-12 17:00 | AMOS M [75%]; COLE KADRMAS | 6h |  |
| 12 | 1.2.4 | wire facility plc |  | 3h? | 2026-05-12 14:00 | 2026-05-12 17:00 |  |  |  | 273d |  | finish no earlier than 2026-05-12 17:00 | COLE KADRMAS; AMOS M | 6h |  |
| 13 | 1.2.5 | tuning fork programming |  | 3.43h? | 2026-05-28 08:00 | 2026-05-28 11:25 |  |  |  | 261.57d |  | start no earlier than 2026-05-28 08:00 | COLE KADRMAS [75%]; AMOS M | 6h |  |
| 14 | 1.2.6 | hmi programming |  | 3.43h? | 2026-05-27 08:00 | 2026-05-27 11:25 |  |  |  | 262.57d |  | start no earlier than 2026-05-27 08:00 | AMOS M [75%]; COLE KADRMAS | 6h |  |
| 15 | 1.2.7 | deliver SCADA tags to SOGC |  | 3.43h? | 2026-05-29 08:00 | 2026-05-29 11:25 |  |  |  | 260.57d |  | start no earlier than 2026-05-29 08:00 | COLE KADRMAS [75%]; AMOS M | 6h |  |
| 16 | 1.3 | **Harris Federal 3-31 Coriolis Meter** |  | 0d? | 2026-05-12 08:00 A | 2026-05-12 08:00 A |  | 100% |  |  |  |  |  |  |  |
| 17 | 1.3.1 | Trougleshoot Meter is Not working Correctly. | milestone | 0h? | 2026-05-12 08:00 A | 2026-05-12 08:00 A |  | 100% |  |  |  | start no earlier than 2026-05-12 08:00 | AMOS M [75%] |  |  |
| 18 | 1.4 | **SOGC Bighorn 2 Well Modbus Comms** |  | 5d? | 2026-05-11 08:00 A | 2026-05-15 17:00 |  | 2% | 4.9d? | 270d |  |  |  | 19h | 0.08h |
| 19 | 1.4.1 | Replace HMI / Loren has ordered |  | 8h? | 2026-05-11 08:00 A | 2026-05-11 17:00 |  | 8% | 7.36h? | 274d |  | start no earlier than 2026-05-11 08:00 | AMOS M [12.5%] | 1h | 0.08h |
| 20 | 1.4.2 | Install modbus adapter for ML1100 |  | 8h? | 2026-05-13 08:00 | 2026-05-13 17:00 |  |  |  | 272d |  | start no earlier than 2026-05-13 08:00 | AMOS M [25%] | 2h |  |
| 21 | 1.4.3 | Program MODBUS into PLC |  | 8h? | 2026-05-14 08:00 | 2026-05-14 17:00 |  |  |  | 271d |  | start no earlier than 2026-05-14 08:00 | AMOS M | 8h |  |
| 22 | 1.4.4 | Program New HMI |  | 8h? | 2026-05-15 08:00 | 2026-05-15 17:00 |  |  |  | 270d |  | start no earlier than 2026-05-15 08:00 | AMOS M | 8h |  |
| 23 | 1.5 | **Bighorn Harris / 4 Well (under air work over 100ppm)** |  | 18.68d? | 2026-06-02 08:00 | 2026-06-26 14:27 |  |  |  | 240.32d |  |  |  | 52h |  |
| 24 | 1.5.1 | Rent air trailer from total saftey |  | 0.89h? | 2026-06-02 08:00 | 2026-06-02 08:53 |  |  |  | 240.32d | 0d | start no earlier than 2026-06-02 08:00 | LOREN MCCRAY [25%]; AMOS M; COLE KADRMAS | 2h |  |
| 25 | 1.5.2 | Verify PLC Program |  | 2.29h? | 2026-06-02 08:53 | 2026-06-02 11:10 | 24 |  |  | 240.32d | 0d | start no earlier than 2026-06-02 08:00 | AMOS M; LOREN MCCRAY [25%]; COLE KADRMAS | 4h |  |
| 26 | 1.5.3 | Verify HMI program |  | 2.29h? | 2026-06-02 11:10 | 2026-06-02 14:27 | 25 |  |  | 240.32d | 0d | start no earlier than 2026-06-02 08:00 | COLE KADRMAS; LOREN MCCRAY [25%]; AMOS M | 4h |  |
| 27 | 1.5.4 | test level switches |  | 32h? | 2026-06-02 14:27 | 2026-06-08 14:27 | 26 |  |  | 240.32d | 0d | start no earlier than 2026-06-02 08:00 | LOREN MCCRAY [25%]; AMOS M [25%]; COLE KADRMAS [25%] | 24h |  |
| 28 | 1.5.5 | commission tank top pressure transmitter |  | 24h? | 2026-06-08 14:27 | 2026-06-11 14:27 | 27 |  |  | 240.32d | 0d | finish no earlier than 2026-06-04 17:00 | LOREN MCCRAY [25%]; AMOS M [25%]; COLE KADRMAS [25%] | 8h |  |
| 29 | 1.5.6 | bypass LIT shutdowns |  | 24h? | 2026-06-11 14:27 | 2026-06-16 14:27 | 28 |  |  | 240.32d | 0d | finish no earlier than 2026-06-04 17:00 | LOREN MCCRAY [25%]; AMOS M [25%]; COLE KADRMAS [25%] | 2h |  |
| 30 | 1.5.7 | document and verify Shutdowns |  | 32h? | 2026-06-16 14:27 | 2026-06-22 14:27 | 29 |  |  | 240.32d | 0d | finish no earlier than 2026-06-05 17:00 | LOREN MCCRAY [25%]; AMOS M [25%]; COLE KADRMAS [25%] | 4h |  |
| 31 | 1.5.8 | send commissioning paperwork to Josh zietz |  | 32h? | 2026-06-22 14:27 | 2026-06-26 14:27 | 30 |  |  | 240.32d |  | finish no earlier than 2026-06-05 17:00 | LOREN MCCRAY [25%]; AMOS M [25%]; COLE KADRMAS [25%] | 4h |  |

| ID | WBS | Task | Duration | Start | Finish | Predecessors | Complete | Remaining | Total slack | Free slack | Constraint | Resources | Work | Actual work |
| --- | --- | --- | --- | --- | --- | --- | --- | --- | --- | --- | --- | --- | --- | --- |
| 32 | 1.6 | **Grasslands Flare / Sales Meters 1h, 3h, 4h,** | 3.5d? | 2026-05-15 08:00 A | 2026-05-20 12:00 |  | 29% | 2.5d? | 267.5d |  |  |  | 28h | 8.04h |
| 33 | 1.6.1 | Wire Gas Transmitters | 4h? | 2026-05-15 08:00 A | 2026-05-15 12:00 A |  | 100% |  |  |  | start no earlier than 2026-05-15 08:00 | AMOS M [50%]; COLE KADRMAS [50%] | 4h | 4h |
| 34 | 1.6.2 | Wire Modbus Loop in Treater Jboxes | 4h? | 2026-05-15 13:00 A | 2026-05-15 17:00 A | 33 | 100% |  |  |  | start no earlier than 2026-05-05 08:00 | AMOS M [50%]; COLE KADRMAS [50%] | 4h | 4h |
| 35 | 1.6.3 | Wire modbus loop in PLC | 4h? | 2026-05-18 08:00 A | 2026-05-18 12:00 | 34 | 1% | 3.96h? | 267.5d | 0d | start no earlier than 2026-05-05 08:00 | AMOS M [50%]; COLE KADRMAS [50%] | 4h | 0.04h |
| 36 | 1.6.4 | Programming Modbus loop into redlion | 6h? | 2026-05-18 13:00 | 2026-05-19 10:00 | 35 |  |  | 267.5d | 0d | start no earlier than 2026-05-05 08:00 | AMOS M [50%]; COLE KADRMAS [50%] | 6h |  |
| 37 | 1.6.5 | program redlion comms into the PLC | 6h? | 2026-05-19 10:00 | 2026-05-19 17:00 | 36 |  |  | 267.5d | 0d | start no earlier than 2026-05-05 08:00 | AMOS M [50%]; COLE KADRMAS [50%] | 6h |  |
| 38 | 1.6.6 | programming Comms / meters into the HMI | 4h? | 2026-05-20 08:00 | 2026-05-20 12:00 | 37 |  |  | 267.5d |  | start no earlier than 2026-05-05 08:00 | AMOS M [50%]; COLE KADRMAS [50%] | 4h |  |
| 39 | 1.7 | **Remove SWT timing for H & L alarms** | 2.25d? | 2026-05-25 08:00 | 2026-05-27 10:00 |  |  |  | 262.75d |  |  |  | 18h |  |
| 40 | 1.7.1 | Crosby 3 Well | 6h? | 2026-05-25 08:00 | 2026-05-25 15:00 |  |  |  | 262.75d | 0d | start no earlier than 2026-05-25 08:00 | AMOS M [50%]; COLE KADRMAS [50%] | 6h |  |
| 41 | 1.7.2 | Harris 7 well | 6h? | 2026-05-25 15:00 | 2026-05-26 12:00 | 40 |  |  | 262.75d | 0d | start no earlier than 2026-05-05 08:00 | AMOS M [50%]; COLE KADRMAS [50%] | 6h |  |
| 42 | 1.7.3 | Bighorn 2 well | 6h? | 2026-05-26 13:00 | 2026-05-27 10:00 | 41 |  |  | 262.75d |  | start no earlier than 2026-05-05 08:00 | AMOS M [50%]; COLE KADRMAS [50%] | 6h |  |
| 43 | 1.8 | **sogc Ian Quick silver - Comm Loss Programming** | 3d? | 2026-05-25 08:00 A | 2026-05-27 17:00 A |  | 100% |  |  |  |  |  | 12h | 12h |
| 44 | 1.8.1 | SP Programming Assist | 8h? | 2026-05-27 08:00 A | 2026-05-27 17:00 A |  | 100% |  |  |  | start no earlier than 2026-05-27 08:00 | SETH PETERSON [50%] | 4h | 4h |
| 45 | 1.8.2 | Implementation on site | 8h? | 2026-05-25 08:00 A | 2026-05-25 17:00 A |  | 100% |  |  |  | start no earlier than 2026-05-25 08:00 | COLE KADRMAS | 8h | 8h |
| 46 | 1.9 | **SOGC Lizzie Rae - Comm Loss Programming** | 4d? | 2026-05-25 08:00 A | 2026-05-28 17:00 A |  | 100% |  |  |  |  | AMOS M; COLE KADRMAS | 76h | 76h |
| 47 | 1.9.1 | SP Programming Assist | 8h? | 2026-05-28 08:00 A | 2026-05-28 17:00 A |  | 100% |  |  |  | start no earlier than 2026-05-28 08:00 | SETH PETERSON [50%] | 4h | 4h |
| 48 | 1.9.2 | Implementation on site | 4h? | 2026-05-25 08:00 A | 2026-05-25 12:00 A |  | 100% |  |  |  | start no earlier than 2026-05-25 08:00 | COLE KADRMAS; AMOS M | 8h | 8h |
| 49 | 2 | **Iron Works - Dual / Tri pack Separator** | 3.5d? | 2026-05-05 08:00 | 2026-05-08 12:00 |  |  |  | 275.5d |  |  |  | 42h |  |
| 50 | 2.1 | Finnish Wiring Panels | 8h? | 2026-05-05 08:00 | 2026-05-05 17:00 |  |  |  | 275.5d | 0d | start no earlier than 2026-05-05 08:00 | DUSTIN HOWE; JACKSON KING | 16h |  |
| 51 | 2.2 | Label Panels | 8h? | 2026-05-06 08:00 | 2026-05-06 17:00 | 50 |  |  | 275.5d | 0d | start no earlier than 2026-05-05 08:00 | DUSTIN HOWE [50%]; JACKSON KING [50%] | 8h |  |
| 52 | 2.3 | Testing Panels | 8h | 2026-05-07 08:00 | 2026-05-07 17:00 | 51 |  |  | 275.5d | 0d | start no earlier than 2026-05-05 08:00 | DUSTIN HOWE; JACKSON KING | 16h |  |
| 53 | 2.4 | Delivery of panels | 4h? | 2026-05-08 08:00 | 2026-05-08 12:00 | 52 |  |  | 275.5d |  | start no earlier than 2026-05-05 08:00 | DUSTIN HOWE [25%]; JACKSON KING [25%] | 2h |  |
| 54 | 3 | **State of ND SW Water Material Procurment** | 0.12d? | 2026-05-05 08:00 | 2026-05-05 09:00 |  |  |  | 278.88d |  |  |  | 7h |  |
| 55 | 3.1 | Receive Submittals from Vendors | 1h? | 2026-05-05 08:00 | 2026-05-05 09:00 |  |  |  | 278.88d |  | start no earlier than 2026-05-05 08:00 | Chasyn Ystaas | 1h |  |
| 56 | 3.2 | Review Submittals | 1h? | 2026-05-05 08:00 | 2026-05-05 09:00 |  |  |  | 278.88d |  | start no earlier than 2026-05-05 08:00 | Chasyn Ystaas | 1h |  |
| 57 | 3.3 | Send Submittals to Engineering | 1h? | 2026-05-05 08:00 | 2026-05-05 09:00 |  |  |  | 278.88d |  | start no earlier than 2026-05-05 08:00 | Chasyn Ystaas | 1h |  |
| 58 | 3.4 | Submittal Approval | 1h? | 2026-05-05 08:00 | 2026-05-05 09:00 |  |  |  | 278.88d |  | start no earlier than 2026-05-05 08:00 | Chasyn Ystaas | 1h |  |
| 59 | 3.5 | Order Material | 1h? | 2026-05-05 08:00 | 2026-05-05 09:00 |  |  |  | 278.88d |  | start no earlier than 2026-05-05 08:00 | Chasyn Ystaas | 1h |  |
| 60 | 3.6 | Track Order | 1h? | 2026-05-05 08:00 | 2026-05-05 09:00 |  |  |  | 278.88d |  | start no earlier than 2026-05-05 08:00 | Chasyn Ystaas | 1h |  |
| 61 | 3.7 | Deliver Materials | 1h? | 2026-05-05 08:00 | 2026-05-05 09:00 |  |  |  | 278.88d |  | start no earlier than 2026-05-05 08:00 | Chasyn Ystaas | 1h |  |

| ID | WBS | Task | Duration | Start | Finish | Complete | Remaining | Actual start | Total slack | Constraint | Resources | Work | Actual work | Invoiced | Paid | Unpaid |
| --- | --- | --- | --- | --- | --- | --- | --- | --- | --- | --- | --- | --- | --- | --- | --- | --- |
| 62 | 4 | **Petro Hunt SCADA** | 24.5d? | 2026-05-11 08:00 | 2026-09-01 17:00 | 28% | 59.12d? | 2026-05-05 08:00 |  |  |  | 179h | 13h | 193,597.72 | 180,000 | 14,000 |
| 63 | 4.1 | Alarm Escilation Scheme Testing | 8h? | 2026-05-05 08:00 A | 2026-05-05 17:00 A | 100% |  |  |  | start no earlier than 2026-05-05 08:00 | RAMI DOURI | 2h | 2h |  |  |  |
| 64 | 4.2 | Verifying All Alarms In FT Optix | 152h? | 2026-05-05 08:00 A | 2026-05-29 17:00 A | 100% |  |  |  | finish no earlier than 2026-05-29 17:00 | RAMI DOURI | 4h | 4h |  |  |  |
| 65 | 4.3 | Verifycation of Call outs In Optix | 16h? | 2026-05-28 08:00 A | 2026-05-29 17:00 A | 100% |  |  |  | finish no earlier than 2026-05-29 17:00 | RAMI DOURI | 4h | 4h |  |  |  |
| 66 | 4.4 | Individual User Session Page | 8h? | 2026-05-05 08:00 A | 2026-05-05 17:00 A | 100% |  |  |  | start no earlier than 2026-05-05 08:00 | RAMI DOURI | 2h | 2h |  |  |  |
| 67 | 4.5 | SCRIPT TO HIDE CERTAIN GROUPS | 2h? | 2026-05-06 08:00 | 2026-05-06 10:00 |  |  |  | 277.75d | start no earlier than 2026-05-06 08:00 | RAMI DOURI | 2h |  |  |  |  |
| 68 | 4.6 | Procount Data & Information | 40h? | 2026-05-07 08:00 | 2026-05-13 17:00 |  |  |  | 272d | start no earlier than 2026-05-07 08:00 | RAMI DOURI | 40h |  |  |  |  |
| 69 | 4.7 | TILES | 8h? | 2026-05-11 08:00 | 2026-05-11 17:00 |  |  |  | 274d | start no earlier than 2026-05-11 08:00 | RAMI DOURI | 8h |  |  |  |  |
| 70 | 4.8 | SWD'S | 80h? | 2026-05-18 08:00 | 2026-05-29 17:00 |  |  |  | 260d | start no earlier than 2026-05-18 08:00 | RAMI DOURI | 80h |  |  |  |  |
| 71 | 4.9 | CLEAN UP WORK | 16h? | 2026-06-01 08:00 | 2026-06-02 17:00 |  |  |  | 258d | start no earlier than 2026-06-01 08:00 | RAMI DOURI | 16h |  |  |  |  |
| 72 | 4.10 | CUSTOMER TRAINING | 12h? | 2026-06-02 08:00 | 2026-06-03 12:00 |  |  |  | 257.5d | start no earlier than 2026-06-02 08:00 | RAMI DOURI | 12h |  |  |  |  |
| 73 | 4.11 | USERS THAT WERENT RECEIVING ALARMS | 1h? | 2026-06-04 08:00 A | 2026-06-04 09:00 A | 100% |  |  |  | start no earlier than 2026-05-06 08:00 | RAMI DOURI | 1h | 1h |  |  |  |
| 74 | 4.12 | VERIFY RETENTIVITY OPERATION | 4h? | 2026-06-08 08:00 | 2026-06-08 12:00 |  |  |  | 254.5d | start no earlier than 2026-06-08 08:00 | RAMI DOURI | 4h |  |  |  |  |
| 75 | 4.13 | Add url to call outs? | 4h? | 2026-05-11 08:00 | 2026-05-11 12:00 |  |  |  | 274.5d | start no earlier than 2026-05-11 08:00 | RAMI DOURI | 4h |  |  |  |  |
| 76 | 4.14 | <New Task> | 8h? | 2026-05-07 08:00 | 2026-05-07 17:00 |  |  |  | 276d | start no earlier than 2026-05-07 08:00 |  |  |  |  |  |  |
| 77 | 4.15 | <New Task> | 8h? | 2026-05-07 08:00 | 2026-05-07 17:00 |  |  |  | 276d | start no earlier than 2026-05-07 08:00 |  |  |  |  |  |  |
| 78 | 4.16 | <New Task> | 8h? | 2026-05-07 08:00 | 2026-05-07 17:00 |  |  |  | 276d | start no earlier than 2026-05-07 08:00 |  |  |  |  |  |  |
| 79 | 4.17 | <New Task> | 8h? | 2026-05-07 08:00 | 2026-05-07 17:00 |  |  |  | 276d | start no earlier than 2026-05-07 08:00 |  |  |  |  |  |  |
| 80 | 4.18 | <New Task> | 8h? | 2026-05-07 08:00 | 2026-05-07 17:00 |  |  |  | 276d | start no earlier than 2026-05-07 08:00 |  |  |  |  |  |  |
| 81 | 4.19 | <New Task> | 8h? | 2026-05-07 08:00 | 2026-05-07 17:00 |  |  |  | 276d | start no earlier than 2026-05-07 08:00 |  |  |  |  |  |  |
| 82 | 4.20 | <New Task> | 8h? | 2026-05-07 08:00 | 2026-05-07 17:00 |  |  |  | 276d | start no earlier than 2026-05-07 08:00 |  |  |  |  |  |  |
| 83 | 4.21 | <New Task> | 8h? | 2026-05-07 08:00 | 2026-05-07 17:00 |  |  |  | 276d | start no earlier than 2026-05-07 08:00 |  |  |  |  |  |  |
| 84 | 4.22 | <New Task> | 8h? | 2026-05-07 08:00 | 2026-05-07 17:00 |  |  |  | 276d | start no earlier than 2026-05-07 08:00 |  |  |  |  |  |  |
| 85 | 4.23 | <New Task> | 8h? | 2026-05-07 08:00 | 2026-05-07 17:00 |  |  |  | 276d | start no earlier than 2026-05-07 08:00 |  |  |  |  |  |  |
| 86 | 4.24 | <New Task> | 8h? | 2026-05-07 08:00 | 2026-05-07 17:00 |  |  |  | 276d | start no earlier than 2026-05-07 08:00 |  |  |  |  |  |  |
| 87 | 4.25 | <New Task> | 8h? | 2026-05-07 08:00 | 2026-05-07 17:00 |  |  |  | 276d | start no earlier than 2026-05-07 08:00 |  |  |  |  |  |  |
| 88 | 4.26 | <New Task> | 8h? | 2026-05-07 08:00 | 2026-05-07 17:00 |  |  |  | 276d | start no earlier than 2026-05-07 08:00 |  |  |  |  |  |  |
| 89 | 4.27 | <New Task> | 8h? | 2026-05-07 08:00 | 2026-05-07 17:00 |  |  |  | 276d | start no earlier than 2026-05-07 08:00 |  |  |  |  |  |  |
| 90 | 4.28 | <New Task> | 8h? | 2026-05-07 08:00 | 2026-05-07 17:00 |  |  |  | 276d | start no earlier than 2026-05-07 08:00 |  |  |  |  |  |  |
| 91 | 4.29 | <New Task> | 8h? | 2026-05-07 08:00 | 2026-05-07 17:00 |  |  |  | 276d | start no earlier than 2026-05-07 08:00 |  |  |  |  |  |  |
| 92 | 4.30 | <New Task> | 8h? | 2026-05-07 08:00 | 2026-05-07 17:00 |  |  |  | 276d | start no earlier than 2026-05-07 08:00 |  |  |  |  |  |  |
| 93 | 4.31 | <New Task> | 8h? | 2026-05-07 08:00 | 2026-05-07 17:00 |  |  |  | 276d | start no earlier than 2026-05-07 08:00 |  |  |  |  |  |  |
| 94 | 4.32 | <New Task> | 8h? | 2026-05-07 08:00 | 2026-05-07 17:00 |  |  |  | 276d | start no earlier than 2026-05-07 08:00 |  |  |  |  |  |  |
| 95 | 4.33 | <New Task> | 8h? | 2026-05-07 08:00 | 2026-05-07 17:00 |  |  |  | 276d | start no earlier than 2026-05-07 08:00 |  |  |  |  |  |  |
| 96 | 4.34 | <New Task> | 8h? | 2026-05-07 08:00 | 2026-05-07 17:00 |  |  |  | 276d | start no earlier than 2026-05-07 08:00 |  |  |  |  |  |  |
| 97 | 4.35 | <New Task> | 8h? | 2026-05-07 08:00 | 2026-05-07 17:00 |  |  |  | 276d | start no earlier than 2026-05-07 08:00 |  |  |  |  |  |  |
| 98 | 4.36 | <New Task> | 8h? | 2026-05-07 08:00 | 2026-05-07 17:00 |  |  |  | 276d | start no earlier than 2026-05-07 08:00 |  |  |  |  |  |  |
| 99 | 4.37 | <New Task> | 8h? | 2026-05-07 08:00 | 2026-05-07 17:00 |  |  |  | 276d | start no earlier than 2026-05-07 08:00 |  |  |  |  |  |  |
| 100 | 4.38 | <New Task> | 8h? | 2026-05-07 08:00 | 2026-05-07 17:00 |  |  |  | 276d | start no earlier than 2026-05-07 08:00 |  |  |  |  |  |  |
| 101 | 4.39 | <New Task> | 8h? | 2026-05-07 08:00 | 2026-05-07 17:00 |  |  |  | 276d | start no earlier than 2026-05-07 08:00 |  |  |  |  |  |  |
| 102 | 4.40 | <New Task> | 8h? | 2026-05-07 08:00 | 2026-05-07 17:00 |  |  |  | 276d | start no earlier than 2026-05-07 08:00 |  |  |  |  |  |  |
| 103 | 4.41 | <New Task> | 8h? | 2026-05-07 08:00 | 2026-05-07 17:00 |  |  |  | 276d | start no earlier than 2026-05-07 08:00 |  |  |  |  |  |  |
| 104 | 4.42 | <New Task> | 8h? | 2026-05-07 08:00 | 2026-05-07 17:00 |  |  |  | 276d | start no earlier than 2026-05-07 08:00 |  |  |  |  |  |  |
| 105 | 4.43 | <New Task> | 8h? | 2026-05-07 08:00 | 2026-05-07 17:00 |  |  |  | 276d | start no earlier than 2026-05-07 08:00 |  |  |  |  |  |  |
| 106 | 4.44 | <New Task> | 8h? | 2026-05-07 08:00 | 2026-05-07 17:00 |  |  |  | 276d | start no earlier than 2026-05-07 08:00 |  |  |  |  |  |  |
| 107 | 4.45 | <New Task> | 8h? | 2026-05-07 08:00 | 2026-05-07 17:00 |  |  |  | 276d | start no earlier than 2026-05-07 08:00 |  |  |  |  |  |  |
| 108 | 4.46 | <New Task> | 8h? | 2026-05-07 08:00 | 2026-05-07 17:00 |  |  |  | 276d | start no earlier than 2026-05-07 08:00 |  |  |  |  |  |  |
| 109 | 4.47 | <New Task> | 8h? | 2026-05-07 08:00 | 2026-05-07 17:00 |  |  |  | 276d | start no earlier than 2026-05-07 08:00 |  |  |  |  |  |  |
| 110 | 4.48 | <New Task> | 8h? | 2026-05-07 08:00 | 2026-05-07 17:00 |  |  |  | 276d | start no earlier than 2026-05-07 08:00 |  |  |  |  |  |  |
| 111 | 4.49 | <New Task> | 8h? | 2026-05-07 08:00 | 2026-05-07 17:00 |  |  |  | 276d | start no earlier than 2026-05-07 08:00 |  |  |  |  |  |  |
| 112 | 4.50 | <New Task> | 8h? | 2026-05-07 08:00 | 2026-05-07 17:00 |  |  |  | 276d | start no earlier than 2026-05-07 08:00 |  |  |  |  |  |  |
| 113 | 4.51 | <New Task> | 8h? | 2026-05-07 08:00 | 2026-05-07 17:00 |  |  |  | 276d | start no earlier than 2026-05-07 08:00 |  |  |  |  |  |  |
| 114 | 4.52 | <New Task> | 8h? | 2026-05-07 08:00 | 2026-05-07 17:00 |  |  |  | 276d | start no earlier than 2026-05-07 08:00 |  |  |  |  |  |  |

| ID | WBS | Task | Type | Duration | Start | Finish | Complete | Remaining | Total slack | Constraint | Resources | Work | Actual work |
| --- | --- | --- | --- | --- | --- | --- | --- | --- | --- | --- | --- | --- | --- |
| 115 | 5 | **GEVO Net-Zero Richardton** |  | 279d | 2026-05-05 08:00 A | 2027-01-06 17:00 | 3% | 171.17d |  |  |  | 1406.1h | 90.87h |
| 116 | 5.1 | **OPTIX HMI LIST** |  | 8d? | 2026-05-06 08:00 | 2026-05-15 17:00 |  |  | 270d |  |  |  |  |
| 117 | 5.1.1 | **UF SKID** |  | 8d? | 2026-05-06 08:00 | 2026-05-15 17:00 |  |  | 270d |  |  |  |  |
| 118 | 5.1.1.1 | CROSS REFERENCE PLC / HMI TAGS | milestone | 0h? | 2026-05-06 08:00 | 2026-05-15 17:00 |  |  | 270d | start no earlier than 2026-05-06 08:00 | RAMI DOURI [75%]; SETH PETERSON |  |  |
| 119 | 5.1.1.2 | PULL LIBRARY OF PROCESS OBJECTS | milestone | 0h? | 2026-05-06 08:00 | 2026-05-06 08:00 |  |  | 278d | start no earlier than 2026-05-06 08:00 | RAMI DOURI [75%] |  |  |
| 120 | 5.1.1.3 | BUILD OPTIX TEMPLATES | milestone | 0h? | 2026-05-06 08:00 | 2026-05-06 08:00 |  |  | 278d | start no earlier than 2026-05-06 08:00 | RAMI DOURI [75%] |  |  |
| 121 | 5.1.1.4 | BUILD PROCESS DISPLAYS | milestone | 0h? | 2026-05-06 08:00 | 2026-05-06 08:00 |  |  | 278d | start no earlier than 2026-05-06 08:00 | RAMI DOURI [75%] |  |  |
| 122 | 5.1.1.5 | TEST DISPLAYS WITH PROGRAM | milestone | 0h? | 2026-05-06 08:00 | 2026-05-06 08:00 |  |  | 278d | start no earlier than 2026-05-06 08:00 | RAMI DOURI [75%] |  |  |
| 123 | 5.1.1.6 | ORDER HMI WEB VIEWER | milestone | 0h? | 2026-05-06 08:00 | 2026-05-06 08:00 |  |  | 278d | start no earlier than 2026-05-06 08:00 | RAMI DOURI [75%] |  |  |
| 124 | 5.1.1.7 | TEST COSS AT PLANT / RUN IN PARALLEL FROM CONTROL ROOM | milestone | 0h? | 2026-05-06 08:00 | 2026-05-06 08:00 |  |  | 278d | start no earlier than 2026-05-06 08:00 | RAMI DOURI [75%] |  |  |
| 125 | 5.1.1.8 | VERIFY COSS WORKS CORRECTLY | milestone | 0h? | 2026-05-06 08:00 | 2026-05-06 08:00 |  |  | 278d | start no earlier than 2026-05-06 08:00 | RAMI DOURI [75%] |  |  |
| 126 | 5.1.2 | **RO SKID** |  | 8d? | 2026-05-06 08:00 | 2026-05-15 17:00 |  |  | 270d |  |  |  |  |
| 127 | 5.1.2.1 | CROSS REFERENCE PLC / HMI TAGS | milestone | 0h? | 2026-05-06 08:00 | 2026-05-15 17:00 |  |  | 270d | start no earlier than 2026-05-06 08:00 | RAMI DOURI [75%]; SETH PETERSON |  |  |
| 128 | 5.1.2.2 | PULL LIBRARY OF PROCESS OBJECTS | milestone | 0h? | 2026-05-06 08:00 | 2026-05-06 08:00 |  |  | 278d | start no earlier than 2026-05-06 08:00 | RAMI DOURI [75%] |  |  |
| 129 | 5.1.2.3 | BUILD OPTIX TEMPLATES | milestone | 0h? | 2026-05-06 08:00 | 2026-05-06 08:00 |  |  | 278d | start no earlier than 2026-05-06 08:00 | RAMI DOURI [75%] |  |  |
| 130 | 5.1.2.4 | BUILD PROCESS DISPLAYS | milestone | 0h? | 2026-05-06 08:00 | 2026-05-06 08:00 |  |  | 278d | start no earlier than 2026-05-06 08:00 | RAMI DOURI [75%] |  |  |
| 131 | 5.1.2.5 | TEST DISPLAYS WITH PROGRAM | milestone | 0h? | 2026-05-06 08:00 | 2026-05-06 08:00 |  |  | 278d | start no earlier than 2026-05-06 08:00 | RAMI DOURI [75%] |  |  |
| 132 | 5.1.2.6 | ORDER HMI WEB VIEWER | milestone | 0h? | 2026-05-06 08:00 | 2026-05-06 08:00 |  |  | 278d | start no earlier than 2026-05-06 08:00 | RAMI DOURI [75%] |  |  |
| 133 | 5.1.2.7 | TEST COSS AT PLANT / RUN IN PARALLEL FROM CONTROL ROOM | milestone | 0h? | 2026-05-06 08:00 | 2026-05-06 08:00 |  |  | 278d | start no earlier than 2026-05-06 08:00 | RAMI DOURI [75%] |  |  |
| 134 | 5.1.2.8 | VERIFY COSS WORKS CORRECTLY | milestone | 0h? | 2026-05-06 08:00 | 2026-05-06 08:00 |  |  | 278d | start no earlier than 2026-05-06 08:00 | RAMI DOURI [75%] |  |  |
| 135 | 5.1.3 | **RTO SKID** |  | 8d? | 2026-05-06 08:00 | 2026-05-15 17:00 |  |  | 270d |  |  |  |  |
| 136 | 5.1.3.1 | CROSS REFERENCE PLC / HMI TAGS | milestone | 0h? | 2026-05-06 08:00 | 2026-05-15 17:00 |  |  | 270d | start no earlier than 2026-05-06 08:00 | RAMI DOURI [75%]; SETH PETERSON |  |  |
| 137 | 5.1.3.2 | PULL LIBRARY OF PROCESS OBJECTS | milestone | 0h? | 2026-05-06 08:00 | 2026-05-06 08:00 |  |  | 278d | start no earlier than 2026-05-06 08:00 | RAMI DOURI [75%] |  |  |
| 138 | 5.1.3.3 | BUILD OPTIX TEMPLATES | milestone | 0h? | 2026-05-06 08:00 | 2026-05-06 08:00 |  |  | 278d | start no earlier than 2026-05-06 08:00 | RAMI DOURI [75%] |  |  |
| 139 | 5.1.3.4 | BUILD PROCESS DISPLAYS | milestone | 0h? | 2026-05-06 08:00 | 2026-05-06 08:00 |  |  | 278d | start no earlier than 2026-05-06 08:00 | RAMI DOURI [75%] |  |  |
| 140 | 5.1.3.5 | TEST DISPLAYS WITH PROGRAM | milestone | 0h? | 2026-05-06 08:00 | 2026-05-06 08:00 |  |  | 278d | start no earlier than 2026-05-06 08:00 | RAMI DOURI [75%] |  |  |
| 141 | 5.1.3.6 | ORDER HMI WEB VIEWER | milestone | 0h? | 2026-05-06 08:00 | 2026-05-06 08:00 |  |  | 278d | start no earlier than 2026-05-06 08:00 | RAMI DOURI [75%] |  |  |
| 142 | 5.1.3.7 | TEST COSS AT PLANT / RUN IN PARALLEL FROM CONTROL ROOM | milestone | 0h? | 2026-05-06 08:00 | 2026-05-06 08:00 |  |  | 278d | start no earlier than 2026-05-06 08:00 | RAMI DOURI [75%] |  |  |
| 143 | 5.1.3.8 | VERIFY COSS WORKS CORRECTLY | milestone | 0h? | 2026-05-06 08:00 | 2026-05-06 08:00 |  |  | 278d | start no earlier than 2026-05-06 08:00 | RAMI DOURI [75%] |  |  |

| ID | WBS | Task | Type | Duration | Start | Finish | Total slack | Constraint | Resources |
| --- | --- | --- | --- | --- | --- | --- | --- | --- | --- |
| 144 | 5.1.4 | **COSS LOAD OUT** |  | 8d? | 2026-05-06 08:00 | 2026-05-15 17:00 | 270d |  |  |
| 145 | 5.1.4.1 | CROSS REFERENCE PLC / HMI TAGS | milestone | 0h? | 2026-05-06 08:00 | 2026-05-15 17:00 | 270d | start no earlier than 2026-05-06 08:00 | RAMI DOURI [75%]; SETH PETERSON |
| 146 | 5.1.4.2 | PULL LIBRARY OF PROCESS OBJECTS | milestone | 0h? | 2026-05-06 08:00 | 2026-05-06 08:00 | 278d | start no earlier than 2026-05-06 08:00 | RAMI DOURI [75%] |
| 147 | 5.1.4.3 | BUILD OPTIX TEMPLATES | milestone | 0h? | 2026-05-06 08:00 | 2026-05-06 08:00 | 278d | start no earlier than 2026-05-06 08:00 | RAMI DOURI [75%] |
| 148 | 5.1.4.4 | BUILD PROCESS DISPLAYS | milestone | 0h? | 2026-05-06 08:00 | 2026-05-06 08:00 | 278d | start no earlier than 2026-05-06 08:00 | RAMI DOURI [75%] |
| 149 | 5.1.4.5 | TEST DISPLAYS WITH PROGRAM | milestone | 0h? | 2026-05-06 08:00 | 2026-05-06 08:00 | 278d | start no earlier than 2026-05-06 08:00 | RAMI DOURI [75%] |
| 150 | 5.1.4.6 | ORDER HMI WEB VIEWER | milestone | 0h? | 2026-05-06 08:00 | 2026-05-06 08:00 | 278d | start no earlier than 2026-05-06 08:00 | RAMI DOURI [75%] |
| 151 | 5.1.4.7 | TEST COSS AT PLANT / RUN IN PARALLEL FROM CONTROL ROOM | milestone | 0h? | 2026-05-06 08:00 | 2026-05-06 08:00 | 278d | start no earlier than 2026-05-06 08:00 | RAMI DOURI [75%] |
| 152 | 5.1.4.8 | VERIFY COSS WORKS CORRECTLY | milestone | 0h? | 2026-05-06 08:00 | 2026-05-06 08:00 | 278d | start no earlier than 2026-05-06 08:00 | RAMI DOURI [75%] |
| 153 | 5.1.5 | **GRAINS** |  | 8d? | 2026-05-06 08:00 | 2026-05-15 17:00 | 270d |  |  |
| 154 | 5.1.5.1 | CROSS REFERENCE PLC / HMI TAGS | milestone | 0h? | 2026-05-06 08:00 | 2026-05-15 17:00 | 270d | start no earlier than 2026-05-06 08:00 | RAMI DOURI [75%]; SETH PETERSON |
| 155 | 5.1.5.2 | PULL LIBRARY OF PROCESS OBJECTS | milestone | 0h? | 2026-05-06 08:00 | 2026-05-06 08:00 | 278d | start no earlier than 2026-05-06 08:00 | RAMI DOURI [75%] |
| 156 | 5.1.5.3 | BUILD OPTIX TEMPLATES | milestone | 0h? | 2026-05-06 08:00 | 2026-05-06 08:00 | 278d | start no earlier than 2026-05-06 08:00 | RAMI DOURI [75%] |
| 157 | 5.1.5.4 | BUILD PROCESS DISPLAYS | milestone | 0h? | 2026-05-06 08:00 | 2026-05-06 08:00 | 278d | start no earlier than 2026-05-06 08:00 | RAMI DOURI [75%] |
| 158 | 5.1.5.5 | TEST DISPLAYS WITH PROGRAM | milestone | 0h? | 2026-05-06 08:00 | 2026-05-06 08:00 | 278d | start no earlier than 2026-05-06 08:00 | RAMI DOURI [75%] |
| 159 | 5.1.5.6 | ORDER HMI WEB VIEWER | milestone | 0h? | 2026-05-06 08:00 | 2026-05-06 08:00 | 278d | start no earlier than 2026-05-06 08:00 | RAMI DOURI [75%] |
| 160 | 5.1.5.7 | TEST COSS AT PLANT / RUN IN PARALLEL FROM CONTROL ROOM | milestone | 0h? | 2026-05-06 08:00 | 2026-05-06 08:00 | 278d | start no earlier than 2026-05-06 08:00 | RAMI DOURI [75%] |
| 161 | 5.1.5.8 | VERIFY COSS WORKS CORRECTLY | milestone | 0h? | 2026-05-06 08:00 | 2026-05-06 08:00 | 278d | start no earlier than 2026-05-06 08:00 | RAMI DOURI [75%] |
| 162 | 5.1.6 | **NEW HAMMER MILLS** |  | 8d? | 2026-05-06 08:00 | 2026-05-15 17:00 | 270d |  |  |
| 163 | 5.1.6.1 | CROSS REFERENCE PLC / HMI TAGS | milestone | 0h? | 2026-05-06 08:00 | 2026-05-15 17:00 | 270d | start no earlier than 2026-05-06 08:00 | RAMI DOURI [75%]; SETH PETERSON |
| 164 | 5.1.6.2 | PULL LIBRARY OF PROCESS OBJECTS | milestone | 0h? | 2026-05-06 08:00 | 2026-05-06 08:00 | 278d | start no earlier than 2026-05-06 08:00 | RAMI DOURI [75%] |
| 165 | 5.1.6.3 | BUILD OPTIX TEMPLATES | milestone | 0h? | 2026-05-06 08:00 | 2026-05-06 08:00 | 278d | start no earlier than 2026-05-06 08:00 | RAMI DOURI [75%] |
| 166 | 5.1.6.4 | BUILD PROCESS DISPLAYS | milestone | 0h? | 2026-05-06 08:00 | 2026-05-06 08:00 | 278d | start no earlier than 2026-05-06 08:00 | RAMI DOURI [75%] |
| 167 | 5.1.6.5 | TEST DISPLAYS WITH PROGRAM | milestone | 0h? | 2026-05-06 08:00 | 2026-05-06 08:00 | 278d | start no earlier than 2026-05-06 08:00 | RAMI DOURI [75%] |
| 168 | 5.1.6.6 | ORDER HMI WEB VIEWER | milestone | 0h? | 2026-05-06 08:00 | 2026-05-06 08:00 | 278d | start no earlier than 2026-05-06 08:00 | RAMI DOURI [75%] |
| 169 | 5.1.6.7 | TEST COSS AT PLANT / RUN IN PARALLEL FROM CONTROL ROOM | milestone | 0h? | 2026-05-06 08:00 | 2026-05-06 08:00 | 278d | start no earlier than 2026-05-06 08:00 | RAMI DOURI [75%] |
| 170 | 5.1.6.8 | VERIFY COSS WORKS CORRECTLY | milestone | 0h? | 2026-05-06 08:00 | 2026-05-06 08:00 | 278d | start no earlier than 2026-05-06 08:00 | RAMI DOURI [75%] |

| ID | WBS | Task | Type | Duration | Start | Finish | Total slack | Constraint | Resources |
| --- | --- | --- | --- | --- | --- | --- | --- | --- | --- |
| 171 | 5.1.7 | **CENTRIFUGE 1** |  | 8d? | 2026-05-06 08:00 | 2026-05-15 17:00 | 270d |  |  |
| 172 | 5.1.7.1 | CROSS REFERENCE PLC / HMI TAGS | milestone | 0h? | 2026-05-06 08:00 | 2026-05-15 17:00 | 270d | start no earlier than 2026-05-06 08:00 | RAMI DOURI [75%]; SETH PETERSON |
| 173 | 5.1.7.2 | PULL LIBRARY OF PROCESS OBJECTS | milestone | 0h? | 2026-05-06 08:00 | 2026-05-06 08:00 | 278d | start no earlier than 2026-05-06 08:00 | RAMI DOURI [75%] |
| 174 | 5.1.7.3 | BUILD OPTIX TEMPLATES | milestone | 0h? | 2026-05-06 08:00 | 2026-05-06 08:00 | 278d | start no earlier than 2026-05-06 08:00 | RAMI DOURI [75%] |
| 175 | 5.1.7.4 | BUILD PROCESS DISPLAYS | milestone | 0h? | 2026-05-06 08:00 | 2026-05-06 08:00 | 278d | start no earlier than 2026-05-06 08:00 | RAMI DOURI [75%] |
| 176 | 5.1.7.5 | TEST DISPLAYS WITH PROGRAM | milestone | 0h? | 2026-05-06 08:00 | 2026-05-06 08:00 | 278d | start no earlier than 2026-05-06 08:00 | RAMI DOURI [75%] |
| 177 | 5.1.7.6 | ORDER HMI WEB VIEWER | milestone | 0h? | 2026-05-06 08:00 | 2026-05-06 08:00 | 278d | start no earlier than 2026-05-06 08:00 | RAMI DOURI [75%] |
| 178 | 5.1.7.7 | TEST COSS AT PLANT / RUN IN PARALLEL FROM CONTROL ROOM | milestone | 0h? | 2026-05-06 08:00 | 2026-05-06 08:00 | 278d | start no earlier than 2026-05-06 08:00 | RAMI DOURI [75%] |
| 179 | 5.1.7.8 | VERIFY COSS WORKS CORRECTLY | milestone | 0h? | 2026-05-06 08:00 | 2026-05-06 08:00 | 278d | start no earlier than 2026-05-06 08:00 | RAMI DOURI [75%] |
| 180 | 5.1.8 | **CENTRIFUGE 2** |  | 8d? | 2026-05-06 08:00 | 2026-05-15 17:00 | 270d |  |  |
| 181 | 5.1.8.1 | CROSS REFERENCE PLC / HMI TAGS | milestone | 0h? | 2026-05-06 08:00 | 2026-05-15 17:00 | 270d | start no earlier than 2026-05-06 08:00 | RAMI DOURI [75%]; SETH PETERSON |
| 182 | 5.1.8.2 | PULL LIBRARY OF PROCESS OBJECTS | milestone | 0h? | 2026-05-06 08:00 | 2026-05-06 08:00 | 278d | start no earlier than 2026-05-06 08:00 | RAMI DOURI [75%] |
| 183 | 5.1.8.3 | BUILD OPTIX TEMPLATES | milestone | 0h? | 2026-05-06 08:00 | 2026-05-06 08:00 | 278d | start no earlier than 2026-05-06 08:00 | RAMI DOURI [75%] |
| 184 | 5.1.8.4 | BUILD PROCESS DISPLAYS | milestone | 0h? | 2026-05-06 08:00 | 2026-05-06 08:00 | 278d | start no earlier than 2026-05-06 08:00 | RAMI DOURI [75%] |
| 185 | 5.1.8.5 | TEST DISPLAYS WITH PROGRAM | milestone | 0h? | 2026-05-06 08:00 | 2026-05-06 08:00 | 278d | start no earlier than 2026-05-06 08:00 | RAMI DOURI [75%] |
| 186 | 5.1.8.6 | ORDER HMI WEB VIEWER | milestone | 0h? | 2026-05-06 08:00 | 2026-05-06 08:00 | 278d | start no earlier than 2026-05-06 08:00 | RAMI DOURI [75%] |
| 187 | 5.1.8.7 | TEST COSS AT PLANT / RUN IN PARALLEL FROM CONTROL ROOM | milestone | 0h? | 2026-05-06 08:00 | 2026-05-06 08:00 | 278d | start no earlier than 2026-05-06 08:00 | RAMI DOURI [75%] |
| 188 | 5.1.8.8 | VERIFY COSS WORKS CORRECTLY | milestone | 0h? | 2026-05-06 08:00 | 2026-05-06 08:00 | 278d | start no earlier than 2026-05-06 08:00 | RAMI DOURI [75%] |
| 189 | 5.1.9 | **CENTRIFUGE 3** |  | 8d? | 2026-05-06 08:00 | 2026-05-15 17:00 | 270d |  |  |
| 190 | 5.1.9.1 | CROSS REFERENCE PLC / HMI TAGS | milestone | 0h? | 2026-05-06 08:00 | 2026-05-15 17:00 | 270d | start no earlier than 2026-05-06 08:00 | RAMI DOURI [75%]; SETH PETERSON |
| 191 | 5.1.9.2 | PULL LIBRARY OF PROCESS OBJECTS | milestone | 0h? | 2026-05-06 08:00 | 2026-05-06 08:00 | 278d | start no earlier than 2026-05-06 08:00 | RAMI DOURI [75%] |
| 192 | 5.1.9.3 | BUILD OPTIX TEMPLATES | milestone | 0h? | 2026-05-06 08:00 | 2026-05-06 08:00 | 278d | start no earlier than 2026-05-06 08:00 | RAMI DOURI [75%] |
| 193 | 5.1.9.4 | BUILD PROCESS DISPLAYS | milestone | 0h? | 2026-05-06 08:00 | 2026-05-06 08:00 | 278d | start no earlier than 2026-05-06 08:00 | RAMI DOURI [75%] |
| 194 | 5.1.9.5 | TEST DISPLAYS WITH PROGRAM | milestone | 0h? | 2026-05-06 08:00 | 2026-05-06 08:00 | 278d | start no earlier than 2026-05-06 08:00 | RAMI DOURI [75%] |
| 195 | 5.1.9.6 | ORDER HMI WEB VIEWER | milestone | 0h? | 2026-05-06 08:00 | 2026-05-06 08:00 | 278d | start no earlier than 2026-05-06 08:00 | RAMI DOURI [75%] |
| 196 | 5.1.9.7 | TEST COSS AT PLANT / RUN IN PARALLEL FROM CONTROL ROOM | milestone | 0h? | 2026-05-06 08:00 | 2026-05-06 08:00 | 278d | start no earlier than 2026-05-06 08:00 | RAMI DOURI [75%] |
| 197 | 5.1.9.8 | VERIFY COSS WORKS CORRECTLY | milestone | 0h? | 2026-05-06 08:00 | 2026-05-06 08:00 | 278d | start no earlier than 2026-05-06 08:00 | RAMI DOURI [75%] |

| ID | WBS | Task | Type | Duration | Start | Finish | Complete | Remaining | Total slack | Constraint | Deadline | Resources | Work | Actual work |
| --- | --- | --- | --- | --- | --- | --- | --- | --- | --- | --- | --- | --- | --- | --- |
| 198 | 5.1.10 | **CENTRIFUGE 4** |  | 8d? | 2026-05-06 08:00 | 2026-05-15 17:00 |  |  | 270d |  |  |  |  |  |
| 199 | 5.1.10.1 | CROSS REFERENCE PLC / HMI TAGS | milestone | 0h? | 2026-05-06 08:00 | 2026-05-15 17:00 |  |  | 270d | start no earlier than 2026-05-06 08:00 |  | RAMI DOURI [75%]; SETH PETERSON |  |  |
| 200 | 5.1.10.2 | PULL LIBRARY OF PROCESS OBJECTS | milestone | 0h? | 2026-05-06 08:00 | 2026-05-06 08:00 |  |  | 278d | start no earlier than 2026-05-06 08:00 |  | RAMI DOURI [75%] |  |  |
| 201 | 5.1.10.3 | BUILD OPTIX TEMPLATES | milestone | 0h? | 2026-05-06 08:00 | 2026-05-06 08:00 |  |  | 278d | start no earlier than 2026-05-06 08:00 |  | RAMI DOURI [75%] |  |  |
| 202 | 5.1.10.4 | BUILD PROCESS DISPLAYS | milestone | 0h? | 2026-05-06 08:00 | 2026-05-06 08:00 |  |  | 278d | start no earlier than 2026-05-06 08:00 |  | RAMI DOURI [75%] |  |  |
| 203 | 5.1.10.5 | TEST DISPLAYS WITH PROGRAM | milestone | 0h? | 2026-05-06 08:00 | 2026-05-06 08:00 |  |  | 278d | start no earlier than 2026-05-06 08:00 |  | RAMI DOURI [75%] |  |  |
| 204 | 5.1.10.6 | ORDER HMI WEB VIEWER | milestone | 0h? | 2026-05-06 08:00 | 2026-05-06 08:00 |  |  | 278d | start no earlier than 2026-05-06 08:00 |  | RAMI DOURI [75%] |  |  |
| 205 | 5.1.10.7 | TEST COSS AT PLANT / RUN IN PARALLEL FROM CONTROL ROOM | milestone | 0h? | 2026-05-06 08:00 | 2026-05-06 08:00 |  |  | 278d | start no earlier than 2026-05-06 08:00 |  | RAMI DOURI [75%] |  |  |
| 206 | 5.1.10.8 | VERIFY COSS WORKS CORRECTLY | milestone | 0h? | 2026-05-06 08:00 | 2026-05-06 08:00 |  |  | 278d | start no earlier than 2026-05-06 08:00 |  | RAMI DOURI [75%] |  |  |
| 207 | 5.1.11 | **CENTRIFUGE MAIN** |  | 8d? | 2026-05-06 08:00 | 2026-05-15 17:00 |  |  | 270d |  |  |  |  |  |
| 208 | 5.1.11.1 | CROSS REFERENCE PLC / HMI TAGS | milestone | 0h? | 2026-05-06 08:00 | 2026-05-15 17:00 |  |  | 270d | start no earlier than 2026-05-06 08:00 |  | RAMI DOURI [75%]; SETH PETERSON |  |  |
| 209 | 5.1.11.2 | PULL LIBRARY OF PROCESS OBJECTS | milestone | 0h? | 2026-05-06 08:00 | 2026-05-06 08:00 |  |  | 278d | start no earlier than 2026-05-06 08:00 |  | RAMI DOURI [75%] |  |  |
| 210 | 5.1.11.3 | BUILD OPTIX TEMPLATES | milestone | 0h? | 2026-05-06 08:00 | 2026-05-06 08:00 |  |  | 278d | start no earlier than 2026-05-06 08:00 |  | RAMI DOURI [75%] |  |  |
| 211 | 5.1.11.4 | BUILD PROCESS DISPLAYS | milestone | 0h? | 2026-05-06 08:00 | 2026-05-06 08:00 |  |  | 278d | start no earlier than 2026-05-06 08:00 |  | RAMI DOURI [75%] |  |  |
| 212 | 5.1.11.5 | TEST DISPLAYS WITH PROGRAM | milestone | 0h? | 2026-05-06 08:00 | 2026-05-06 08:00 |  |  | 278d | start no earlier than 2026-05-06 08:00 |  | RAMI DOURI [75%] |  |  |
| 213 | 5.1.11.6 | ORDER HMI WEB VIEWER | milestone | 0h? | 2026-05-06 08:00 | 2026-05-06 08:00 |  |  | 278d | start no earlier than 2026-05-06 08:00 |  | RAMI DOURI [75%] |  |  |
| 214 | 5.1.11.7 | TEST COSS AT PLANT / RUN IN PARALLEL FROM CONTROL ROOM | milestone | 0h? | 2026-05-06 08:00 | 2026-05-06 08:00 |  |  | 278d | start no earlier than 2026-05-06 08:00 |  | RAMI DOURI [75%] |  |  |
| 215 | 5.1.11.8 | VERIFY HMI / SYSTEM WORKS CORRECTLY | milestone | 0h? | 2026-05-06 08:00 | 2026-05-06 08:00 |  |  | 278d | start no earlier than 2026-05-06 08:00 |  | RAMI DOURI [75%] |  |  |
| 216 | 5.2 | **OPTIX COSS SERVER** |  | 8.43d? | 2026-05-06 08:00 A | 2026-05-18 11:25 | 53% | 3.95d? | 24.57d |  | 2026-06-19 17:00 |  | 80h | 42.87h |
| 217 | 5.2.1 | CROSS REFERENCE PLC / HMI TAGS |  | 6.86h? | 2026-05-06 08:00 A | 2026-05-18 11:25 A | 100% |  |  | start no earlier than 2026-05-06 08:00 |  | RAMI DOURI [75%]; SETH PETERSON | 6h | 6h |
| 218 | 5.2.2 | PULL LIBRARY OF PROCESS OBJECTS |  | 10.67h? | 2026-05-06 08:00 A | 2026-05-07 10:40 | 75% | 2.67h? | 31.67d | start no earlier than 2026-05-06 08:00 |  | RAMI DOURI [75%] | 8h | 6h |
| 219 | 5.2.3 | BUILD OPTIX TEMPLATES |  | 6.67h? | 2026-05-06 08:00 A | 2026-05-06 15:40 | 75% | 1.67h? | 32.17d | start no earlier than 2026-05-06 08:00 |  | RAMI DOURI [75%] | 5h | 3.75h |
| 220 | 5.2.4 | BUILD PROCESS DISPLAYS |  | 21.33h? | 2026-05-06 08:00 A | 2026-05-08 14:20 | 75% | 5.33h? | 30.33d | start no earlier than 2026-05-06 08:00 |  | RAMI DOURI [75%] | 16h | 12h |
| 221 | 5.2.5 | TEST DISPLAYS WITH PROGRAM |  | 12h? | 2026-05-06 08:00 A | 2026-05-07 12:00 | 67% | 4h? | 31.5d | start no earlier than 2026-05-06 08:00 |  | RAMI DOURI [75%] | 9h | 6h |
| 222 | 5.2.6 | ORDER HMI WEB VIEWER |  | 8h? | 2026-05-06 08:00 A | 2026-05-06 17:00 | 75% | 2h? | 32d | start no earlier than 2026-05-06 08:00 |  | RAMI DOURI [75%] | 6h | 4.5h |
| 223 | 5.2.7 | TEST COSS AT PLANT / RUN IN PARALLEL FROM CONTROL ROOM |  | 26.67h? | 2026-05-06 08:00 A | 2026-05-11 10:40 | 23% | 20.51h? | 29.67d | start no earlier than 2026-05-06 08:00 |  | RAMI DOURI [75%] | 20h | 4.62h |
| 224 | 5.2.8 | VERIFY COSS WORKS CORRECTLY |  | 13.33h? | 2026-05-06 08:00 | 2026-05-07 14:20 |  |  | 31.33d | start no earlier than 2026-05-06 08:00 |  | RAMI DOURI [75%] | 10h |  |

| ID | WBS | Task | Duration | Start | Finish | Total slack | Constraint | Deadline | Resources | Work |
| --- | --- | --- | --- | --- | --- | --- | --- | --- | --- | --- |
| 225 | 5.3 | **VNC Viewer for RO** | 1d? | 2026-05-05 08:00 | 2026-05-05 17:00 | 278d |  |  |  | 4.7h |
| 226 | 5.3.1 | UPLOAD HMI PROGRAM | 8h? | 2026-05-05 08:00 | 2026-05-05 17:00 | 278d | start no earlier than 2026-05-05 08:00 |  | KOLINA SCHANTZ [12.5%] | 1h |
| 227 | 5.3.2 | VERIFY SOFTWARE VERSION | 1.54h? | 2026-05-05 08:00 | 2026-05-05 09:32 | 278.81d | start no earlier than 2026-05-05 08:00 |  | KOLINA SCHANTZ [13%] | 0.2h |
| 228 | 5.3.3 | INSTALL FT VIEW POINT | 7.69h? | 2026-05-05 08:00 | 2026-05-05 16:41 | 278.04d | start no earlier than 2026-05-05 08:00 |  | KOLINA SCHANTZ [13%] | 1h |
| 229 | 5.3.4 | RUN VIEWPOINT INSTALLER | 7.69h? | 2026-05-05 08:00 | 2026-05-05 16:41 | 278.04d | start no earlier than 2026-05-05 08:00 |  | KOLINA SCHANTZ [13%] | 1h |
| 230 | 5.3.5 | SEND / EMAIL LINK TO DIRECT AUTOMATION TO PROGRAM ONTO DCS SCREEN | 7.69h? | 2026-05-05 08:00 | 2026-05-05 16:41 | 278.04d | start no earlier than 2026-05-05 08:00 |  | KOLINA SCHANTZ [13%] | 1h |
| 231 | 5.3.6 | VERIFY LINK / BUTTON WORKS FROM CONTROL ROOM | 3.85h? | 2026-05-05 08:00 | 2026-05-05 11:50 | 278.52d | start no earlier than 2026-05-05 08:00 |  | KOLINA SCHANTZ [13%] | 0.5h |
| 232 | 5.4 | **VNC Viewer for UF** | 1d? | 2026-05-05 08:00 | 2026-05-05 17:00 | 278d |  |  |  | 4.4h |
| 233 | 5.4.1 | UPLOAD HMI PROGRAM | 8h? | 2026-05-05 08:00 | 2026-05-05 17:00 | 278d | start no earlier than 2026-05-05 08:00 |  |  | 0.2h |
| 234 | 5.4.2 | VERIFY SOFTWARE VERSION | 8h? | 2026-05-05 08:00 | 2026-05-05 17:00 | 278d | start no earlier than 2026-05-05 08:00 |  |  | 1h |
| 235 | 5.4.3 | INSTALL FT VIEW POINT | 8h? | 2026-05-05 08:00 | 2026-05-05 17:00 | 278d | start no earlier than 2026-05-05 08:00 |  |  | 1h |
| 236 | 5.4.4 | RUN VIEWPOINT INSTALLER | 8h? | 2026-05-05 08:00 | 2026-05-05 17:00 | 278d | start no earlier than 2026-05-05 08:00 |  |  | 0.2h |
| 237 | 5.4.5 | SEND / EMAIL LINK TO DIRECT AUTOMATION TO PROGRAM ONTO DCS SCREEN | 8h? | 2026-05-05 08:00 | 2026-05-05 17:00 | 278d | start no earlier than 2026-05-05 08:00 |  |  | 1h |
| 238 | 5.4.6 | VERIFY LINK / BUTTON WORKS FROM CONTROL ROOM | 8h? | 2026-05-05 08:00 | 2026-05-05 17:00 | 278d | start no earlier than 2026-05-05 08:00 |  |  | 1h |
| 239 | 5.5 | **Train Load Out** | 1d? | 2026-05-05 08:00 | 2026-05-05 17:00 | 7d |  | 2026-05-31 17:00 |  | 32h |
| 240 | 5.5.1 | Develop Scope of Work on What needs completed | 8h? | 2026-05-05 08:00 | 2026-05-05 17:00 | 7d | start no earlier than 2026-05-05 08:00 | 2026-05-14 17:00 |  | 6h |
| 241 | 5.5.2 | verify fiber optic cabling and terminations | 8h? | 2026-05-05 08:00 | 2026-05-05 17:00 | 7d | start no earlier than 2026-05-05 08:00 | 2026-05-14 17:00 |  | 6h |
| 242 | 5.5.3 | verify wiring to skid | 8h? | 2026-05-05 08:00 | 2026-05-05 17:00 | 7d | start no earlier than 2026-05-05 08:00 | 2026-05-14 17:00 |  | 4h |
| 243 | 5.5.4 | verify modbus comms from ski | 8h? | 2026-05-05 08:00 | 2026-05-05 17:00 | 18d | start no earlier than 2026-05-05 08:00 | 2026-05-30 17:00 |  | 8h |
| 244 | 5.5.5 | verify permissives to new skid | 8h? | 2026-05-05 08:00 | 2026-05-05 17:00 | 18d | start no earlier than 2026-05-05 08:00 | 2026-05-30 17:00 |  | 8h |
| 245 | 5.6 | **Demulsifier Pump** | 1d? | 2026-05-05 08:00 | 2026-05-05 17:00 | 278d |  |  |  | 19h |
| 246 | 5.6.1 | Order Pump | 8h? | 2026-05-05 08:00 | 2026-05-05 17:00 | 278d | start no earlier than 2026-05-05 08:00 |  | SETH PETERSON [37.5%] | 3h |
| 247 | 5.6.2 | Verify Cable Pulls required with Electrical | 8h? | 2026-05-05 08:00 | 2026-05-05 17:00 | 278d | start no earlier than 2026-05-05 08:00 |  |  | 4h |
| 248 | 5.6.3 | Coordinate Termination Points and S.O.W. with Direct Automation | 8h? | 2026-05-05 08:00 | 2026-05-05 17:00 | 278d | start no earlier than 2026-05-05 08:00 |  |  | 4h |
| 249 | 5.6.4 | Terminate Chemical Pump | 8h? | 2026-05-05 08:00 | 2026-05-05 17:00 | 278d | start no earlier than 2026-05-05 08:00 |  |  | 4h |
| 250 | 5.6.5 | Terminate D.C.S. wiring | 8h? | 2026-05-05 08:00 | 2026-05-05 17:00 | 278d | start no earlier than 2026-05-05 08:00 |  |  | 4h |

| ID | WBS | Task | Duration | Start | Finish | Predecessors | Complete | Remaining | Total slack | Free slack | Constraint | Resources | Work | Actual work |
| --- | --- | --- | --- | --- | --- | --- | --- | --- | --- | --- | --- | --- | --- | --- |
| 251 | 5.7 | **Gevo Maintenance Contract** | 170d? | 2026-05-11 08:00 A | 2027-01-06 17:00 |  | 6% | 162.92d? |  |  |  |  | 824h | 48h |
| 252 | 5.7.1 | Monday | 8h? | 2026-05-11 08:00 A | 2026-05-11 17:00 A |  | 100% |  |  |  | start no earlier than 2026-05-11 08:00 | KOLINA SCHANTZ | 8h | 8h |
| 253 | 5.7.2 | Wendseday | 8h? | 2026-05-13 08:00 A | 2026-05-13 17:00 A |  | 100% |  |  |  | start no earlier than 2026-05-13 08:00 | KOLINA SCHANTZ | 8h | 8h |
| 254 | 5.7.3 | Friday | 8h? | 2026-05-15 08:00 A | 2026-05-15 17:00 A |  | 100% |  |  |  | start no earlier than 2026-05-15 08:00 | KOLINA SCHANTZ | 8h | 8h |
| 255 | 5.7.4 | Monday | 8h? | 2026-05-18 08:00 A | 2026-05-18 17:00 A | 254 | 100% |  |  |  |  | KOLINA SCHANTZ | 8h | 8h |
| 256 | 5.7.5 | Wendseday | 8h? | 2026-05-20 08:00 A | 2026-05-20 17:00 A |  | 100% |  |  |  | start no earlier than 2026-05-20 08:00 | KOLINA SCHANTZ | 8h | 8h |
| 257 | 5.7.6 | Friday | 8h? | 2026-05-22 08:00 A | 2026-05-22 17:00 A |  | 100% |  |  |  | start no earlier than 2026-05-22 08:00 | KOLINA SCHANTZ | 8h | 8h |
| 258 | 5.7.7 | Monday | 8h? | 2026-05-25 08:00 | 2026-05-25 17:00 | 257 |  |  | 264d |  |  | KOLINA SCHANTZ | 8h |  |
| 259 | 5.7.8 | Wendseday | 8h? | 2026-05-27 08:00 | 2026-05-27 17:00 |  |  |  | 262d |  | start no earlier than 2026-05-27 08:00 | KOLINA SCHANTZ | 8h |  |
| 260 | 5.7.9 | Friday | 8h? | 2026-05-29 08:00 | 2026-05-29 17:00 |  |  |  | 259d | 0d | start no earlier than 2026-05-29 08:00 | KOLINA SCHANTZ | 8h |  |
| 261 | 5.7.10 | Monday | 8h? | 2026-06-01 08:00 | 2026-06-01 17:00 | 260 |  |  | 259d |  |  | KOLINA SCHANTZ | 8h |  |
| 262 | 5.7.11 | Wendseday | 8h? | 2026-06-03 08:00 | 2026-06-03 17:00 |  |  |  | 257d |  | start no earlier than 2026-06-03 08:00 | KOLINA SCHANTZ | 8h |  |
| 263 | 5.7.12 | Friday | 8h? | 2026-06-05 08:00 | 2026-06-05 17:00 |  |  |  | 254d | 0d | start no earlier than 2026-06-05 08:00 | KOLINA SCHANTZ | 8h |  |
| 264 | 5.7.13 | Monday | 8h? | 2026-06-08 08:00 | 2026-06-08 17:00 | 263 |  |  | 254d |  |  | KOLINA SCHANTZ | 8h |  |
| 265 | 5.7.14 | Wendseday | 8h? | 2026-06-10 08:00 | 2026-06-10 17:00 |  |  |  | 252d |  | start no earlier than 2026-06-10 08:00 | KOLINA SCHANTZ | 8h |  |
| 266 | 5.7.15 | Friday | 8h? | 2026-06-12 08:00 | 2026-06-12 17:00 |  |  |  | 249d | 0d | start no earlier than 2026-06-12 08:00 | KOLINA SCHANTZ | 8h |  |
| 267 | 5.7.16 | Monday | 8h? | 2026-06-15 08:00 | 2026-06-15 17:00 | 266 |  |  | 249d |  |  | KOLINA SCHANTZ | 8h |  |
| 268 | 5.7.17 | Wendseday | 8h? | 2026-06-17 08:00 | 2026-06-17 17:00 |  |  |  | 247d |  | start no earlier than 2026-06-17 08:00 | KOLINA SCHANTZ | 8h |  |
| 269 | 5.7.18 | Friday | 8h? | 2026-06-19 08:00 | 2026-06-19 17:00 |  |  |  | 245d |  | start no earlier than 2026-06-19 08:00 | KOLINA SCHANTZ | 8h |  |
| 270 | 5.7.19 | Monday | 8h? | 2026-06-22 08:00 | 2026-06-22 17:00 |  |  |  | 244d |  | start no earlier than 2026-06-22 08:00 | KOLINA SCHANTZ | 8h |  |
| 271 | 5.7.20 | Wendseday | 8h? | 2026-06-24 08:00 | 2026-06-24 17:00 |  |  |  | 242d |  | start no earlier than 2026-06-24 08:00 | KOLINA SCHANTZ | 8h |  |
| 272 | 5.7.21 | Friday | 8h? | 2026-06-26 08:00 | 2026-06-26 17:00 |  |  |  | 239d | 5d | start no earlier than 2026-06-26 08:00 | KOLINA SCHANTZ | 8h |  |
| 273 | 5.7.22 | Monday | 8h? | 2026-07-06 08:00 | 2026-07-06 17:00 | 272, 275 |  |  | 234d |  |  | KOLINA SCHANTZ | 8h |  |
| 274 | 5.7.23 | Wendseday | 8h? | 2026-07-01 08:00 | 2026-07-01 17:00 |  |  |  | 237d |  | start no earlier than 2026-07-01 08:00 | KOLINA SCHANTZ | 8h |  |
| 275 | 5.7.24 | Friday | 8h? | 2026-07-03 08:00 | 2026-07-03 17:00 |  |  |  | 234d | 0d | start no earlier than 2026-07-03 08:00 | KOLINA SCHANTZ | 8h |  |
| 276 | 5.7.25 | Monday | 8h? | 2026-09-07 08:00 | 2026-09-07 17:00 | 302 |  |  | 189d |  |  | KOLINA SCHANTZ | 8h |  |
| 277 | 5.7.26 | Wendseday | 8h? | 2026-07-08 08:00 | 2026-07-08 17:00 |  |  |  | 232d |  | start no earlier than 2026-07-08 08:00 | KOLINA SCHANTZ | 8h |  |
| 278 | 5.7.27 | Friday | 8h? | 2026-07-10 08:00 | 2026-07-10 17:00 |  |  |  | 230d |  | start no earlier than 2026-07-10 08:00 | KOLINA SCHANTZ | 8h |  |
| 279 | 5.7.28 | Monday | 8h? | 2026-07-13 08:00 | 2026-07-13 17:00 |  |  |  | 229d |  | start no earlier than 2026-07-13 08:00 | KOLINA SCHANTZ | 8h |  |
| 280 | 5.7.29 | Wendseday | 8h? | 2026-07-15 08:00 | 2026-07-15 17:00 |  |  |  | 227d |  | start no earlier than 2026-07-15 08:00 | KOLINA SCHANTZ | 8h |  |
| 281 | 5.7.30 | Friday | 8h? | 2026-07-17 08:00 | 2026-07-17 17:00 |  |  |  | 225d |  | start no earlier than 2026-07-17 08:00 | KOLINA SCHANTZ | 8h |  |
| 282 | 5.7.31 | Monday | 8h? | 2026-07-20 08:00 | 2026-07-20 17:00 |  |  |  | 224d |  | start no earlier than 2026-07-20 08:00 | KOLINA SCHANTZ | 8h |  |
| 283 | 5.7.32 | Wendseday | 8h? | 2026-07-22 08:00 | 2026-07-22 17:00 |  |  |  | 222d |  | start no earlier than 2026-07-22 08:00 | KOLINA SCHANTZ | 8h |  |
| 284 | 5.7.33 | Friday | 8h? | 2026-07-24 08:00 | 2026-07-24 17:00 |  |  |  | 220d |  | start no earlier than 2026-07-24 08:00 | KOLINA SCHANTZ | 8h |  |
| 285 | 5.7.34 | Monday | 8h? | 2026-07-27 08:00 | 2026-07-27 17:00 |  |  |  | 219d |  | start no earlier than 2026-07-27 08:00 | KOLINA SCHANTZ | 8h |  |
| 286 | 5.7.35 | Wendseday | 8h? | 2026-07-29 08:00 | 2026-07-29 17:00 |  |  |  | 217d |  | start no earlier than 2026-07-29 08:00 | KOLINA SCHANTZ | 8h |  |
| 287 | 5.7.36 | Friday | 8h? | 2026-07-31 08:00 | 2026-07-31 17:00 |  |  |  | 215d |  | start no earlier than 2026-07-31 08:00 | KOLINA SCHANTZ | 8h |  |
| 288 | 5.7.37 | Monday | 8h? | 2026-08-03 08:00 | 2026-08-03 17:00 |  |  |  | 214d |  | start no earlier than 2026-08-03 08:00 | KOLINA SCHANTZ | 8h |  |
| 289 | 5.7.38 | Wendseday | 8h? | 2026-08-05 08:00 | 2026-08-05 17:00 |  |  |  | 212d |  | finish no earlier than 2026-08-05 17:00 | KOLINA SCHANTZ [4.35%] | 8h |  |
| 290 | 5.7.39 | Friday | 8h? | 2026-08-07 08:00 | 2026-08-07 17:00 |  |  |  | 210d |  | start no earlier than 2026-08-07 08:00 | KOLINA SCHANTZ | 8h |  |
| 291 | 5.7.40 | Monday | 8h? | 2026-08-10 08:00 | 2026-08-10 17:00 |  |  |  | 209d |  | start no earlier than 2026-08-10 08:00 | KOLINA SCHANTZ | 8h |  |
| 292 | 5.7.41 | Wendseday | 8h? | 2026-08-12 08:00 | 2026-08-12 17:00 |  |  |  | 207d |  | start no earlier than 2026-08-12 08:00 | KOLINA SCHANTZ | 8h |  |
| 293 | 5.7.42 | Friday | 8h? | 2026-08-14 08:00 | 2026-08-14 17:00 |  |  |  | 205d |  | start no earlier than 2026-08-14 08:00 | KOLINA SCHANTZ | 8h |  |
| 294 | 5.7.43 | Monday | 8h? | 2026-08-17 08:00 | 2026-08-17 17:00 |  |  |  | 204d |  | start no earlier than 2026-08-17 08:00 | KOLINA SCHANTZ | 8h |  |
| 295 | 5.7.44 | Wendseday | 8h? | 2026-08-19 08:00 | 2026-08-19 17:00 |  |  |  | 202d |  | start no earlier than 2026-08-19 08:00 | KOLINA SCHANTZ | 8h |  |
| 296 | 5.7.45 | Friday | 8h? | 2026-08-21 08:00 | 2026-08-21 17:00 |  |  |  | 200d |  | start no earlier than 2026-08-21 08:00 | KOLINA SCHANTZ | 8h |  |
| 297 | 5.7.46 | Monday | 8h? | 2026-08-24 08:00 | 2026-08-24 17:00 |  |  |  | 199d |  | start no earlier than 2026-08-24 08:00 | KOLINA SCHANTZ | 8h |  |
| 298 | 5.7.47 | Wendseday | 8h? | 2026-08-26 08:00 | 2026-08-26 17:00 |  |  |  | 197d |  | start no earlier than 2026-08-26 08:00 | KOLINA SCHANTZ | 8h |  |
| 299 | 5.7.48 | Friday | 8h? | 2026-08-28 08:00 | 2026-08-28 17:00 |  |  |  | 195d |  | start no earlier than 2026-08-28 08:00 | KOLINA SCHANTZ | 8h |  |
| 300 | 5.7.49 | Monday | 8h? | 2026-08-31 08:00 | 2026-08-31 17:00 |  |  |  | 194d |  | start no earlier than 2026-08-31 08:00 | KOLINA SCHANTZ | 8h |  |
| 301 | 5.7.50 | Wendseday | 8h? | 2026-09-02 08:00 | 2026-09-02 17:00 |  |  |  | 192d |  | start no earlier than 2026-09-02 08:00 | KOLINA SCHANTZ | 8h |  |
| 302 | 5.7.51 | Friday | 8h? | 2026-09-04 08:00 | 2026-09-04 17:00 |  |  |  | 189d | 0d | start no earlier than 2026-09-04 08:00 | KOLINA SCHANTZ | 8h |  |
| 303 | 5.7.52 | Monday | 8h? | 2026-09-07 08:00 | 2026-09-07 17:00 |  |  |  | 189d |  | start no earlier than 2026-09-07 08:00 | KOLINA SCHANTZ | 8h |  |
| 304 | 5.7.53 | Wendseday | 8h? | 2026-09-09 08:00 | 2026-09-09 17:00 |  |  |  | 187d |  | start no earlier than 2026-09-09 08:00 | KOLINA SCHANTZ | 8h |  |
| 305 | 5.7.54 | Friday | 8h? | 2026-09-11 08:00 | 2026-09-11 17:00 |  |  |  | 185d |  | start no earlier than 2026-09-11 08:00 | KOLINA SCHANTZ | 8h |  |
| 306 | 5.7.55 | Monday | 8h? | 2026-09-14 08:00 | 2026-09-14 17:00 |  |  |  | 184d |  | start no earlier than 2026-09-14 08:00 | KOLINA SCHANTZ | 8h |  |
| 307 | 5.7.56 | Wendseday | 8h? | 2026-09-16 08:00 | 2026-09-16 17:00 |  |  |  | 182d |  | start no earlier than 2026-09-16 08:00 | KOLINA SCHANTZ | 8h |  |
| 308 | 5.7.57 | Friday | 8h? | 2026-09-18 08:00 | 2026-09-18 17:00 |  |  |  | 180d |  | start no earlier than 2026-09-18 08:00 | KOLINA SCHANTZ | 8h |  |
| 309 | 5.7.58 | Monday | 8h? | 2026-09-21 08:00 | 2026-09-21 17:00 |  |  |  | 179d |  | start no earlier than 2026-09-21 08:00 | KOLINA SCHANTZ | 8h |  |
| 310 | 5.7.59 | Wendseday | 8h? | 2026-09-23 08:00 | 2026-09-23 17:00 |  |  |  | 177d |  | start no earlier than 2026-09-23 08:00 | KOLINA SCHANTZ | 8h |  |
| 311 | 5.7.60 | Friday | 8h? | 2026-09-25 08:00 | 2026-09-25 17:00 |  |  |  | 175d |  | start no earlier than 2026-09-25 08:00 | KOLINA SCHANTZ | 8h |  |
| 312 | 5.7.61 | Monday | 8h? | 2026-09-28 08:00 | 2026-09-28 17:00 |  |  |  | 174d |  | start no earlier than 2026-09-28 08:00 | KOLINA SCHANTZ | 8h |  |
| 313 | 5.7.62 | Wendseday | 8h? | 2026-09-30 08:00 | 2026-09-30 17:00 |  |  |  | 172d |  | start no earlier than 2026-09-30 08:00 | KOLINA SCHANTZ | 8h |  |
| 314 | 5.7.63 | Friday | 8h? | 2026-10-02 08:00 | 2026-10-02 17:00 |  |  |  | 170d |  | start no earlier than 2026-10-02 08:00 | KOLINA SCHANTZ | 8h |  |
| 315 | 5.7.64 | Monday | 8h? | 2026-10-05 08:00 | 2026-10-05 17:00 |  |  |  | 169d |  | start no earlier than 2026-10-05 08:00 | KOLINA SCHANTZ | 8h |  |
| 316 | 5.7.65 | Wendseday | 8h? | 2026-10-07 08:00 | 2026-10-07 17:00 |  |  |  | 167d |  | start no earlier than 2026-10-07 08:00 | KOLINA SCHANTZ | 8h |  |
| 317 | 5.7.66 | Friday | 8h? | 2026-10-09 08:00 | 2026-10-09 17:00 |  |  |  | 165d |  | start no earlier than 2026-10-09 08:00 | KOLINA SCHANTZ | 8h |  |
| 318 | 5.7.67 | Monday | 8h? | 2026-10-12 08:00 | 2026-10-12 17:00 |  |  |  | 164d |  | start no earlier than 2026-10-12 08:00 | KOLINA SCHANTZ | 8h |  |
| 319 | 5.7.68 | Wendseday | 8h? | 2026-10-14 08:00 | 2026-10-14 17:00 |  |  |  | 162d |  | start no earlier than 2026-10-14 08:00 | KOLINA SCHANTZ | 8h |  |
| 320 | 5.7.69 | Friday | 8h? | 2026-10-16 08:00 | 2026-10-16 17:00 |  |  |  | 160d |  | start no earlier than 2026-10-16 08:00 | KOLINA SCHANTZ | 8h |  |

| ID | WBS | Task | Duration | Start | Finish | Total slack | Constraint | Resources | Work |
| --- | --- | --- | --- | --- | --- | --- | --- | --- | --- |
| 321 | 5.7.70 | Monday | 8h? | 2026-10-19 08:00 | 2026-10-19 17:00 | 159d | start no earlier than 2026-10-19 08:00 | KOLINA SCHANTZ | 8h |
| 322 | 5.7.71 | Wendseday | 8h? | 2026-10-21 08:00 | 2026-10-21 17:00 | 157d | start no earlier than 2026-10-21 08:00 | KOLINA SCHANTZ | 8h |
| 323 | 5.7.72 | Friday | 8h? | 2026-10-23 08:00 | 2026-10-23 17:00 | 155d | start no earlier than 2026-10-23 08:00 | KOLINA SCHANTZ | 8h |
| 324 | 5.7.73 | Monday | 8h? | 2026-10-26 08:00 | 2026-10-26 17:00 | 154d | start no earlier than 2026-10-26 08:00 | KOLINA SCHANTZ | 8h |
| 325 | 5.7.74 | Wendseday | 8h? | 2026-10-28 08:00 | 2026-10-28 17:00 | 152d | start no earlier than 2026-10-28 08:00 | KOLINA SCHANTZ | 8h |
| 326 | 5.7.75 | Friday | 8h? | 2026-10-30 08:00 | 2026-10-30 17:00 | 150d | start no earlier than 2026-10-30 08:00 | KOLINA SCHANTZ | 8h |
| 327 | 5.7.76 | RENEW CONTRACT! | 8h? | 2026-11-02 08:00 | 2026-11-02 17:00 | 149d | start no earlier than 2026-11-02 08:00 | KYLE MERRILL | 8h |
| 328 | 5.7.77 | Monday | 8h? | 2026-11-02 08:00 | 2026-11-02 17:00 | 149d | start no earlier than 2026-11-02 08:00 | KOLINA SCHANTZ | 8h |
| 329 | 5.7.78 | Wendseday | 8h? | 2026-11-04 08:00 | 2026-11-04 17:00 | 147d | start no earlier than 2026-11-04 08:00 | KOLINA SCHANTZ | 8h |
| 330 | 5.7.79 | Friday | 8h? | 2026-11-06 08:00 | 2026-11-06 17:00 | 145d | start no earlier than 2026-11-06 08:00 | KOLINA SCHANTZ | 8h |
| 331 | 5.7.80 | Monday | 8h? | 2026-11-09 08:00 | 2026-11-09 17:00 | 144d | start no earlier than 2026-11-09 08:00 | KOLINA SCHANTZ | 8h |
| 332 | 5.7.81 | Wendseday | 8h? | 2026-11-11 08:00 | 2026-11-11 17:00 | 142d | start no earlier than 2026-11-11 08:00 | KOLINA SCHANTZ | 8h |
| 333 | 5.7.82 | Friday | 8h? | 2026-11-13 08:00 | 2026-11-13 17:00 | 140d | start no earlier than 2026-11-13 08:00 | KOLINA SCHANTZ | 8h |
| 334 | 5.7.83 | Monday | 8h? | 2026-11-16 08:00 | 2026-11-16 17:00 | 139d | start no earlier than 2026-11-16 08:00 | KOLINA SCHANTZ | 8h |
| 335 | 5.7.84 | Wendseday | 8h? | 2026-11-18 08:00 | 2026-11-18 17:00 | 137d | start no earlier than 2026-11-18 08:00 | KOLINA SCHANTZ | 8h |
| 336 | 5.7.85 | Friday | 8h? | 2026-11-20 08:00 | 2026-11-20 17:00 | 135d | start no earlier than 2026-11-20 08:00 | KOLINA SCHANTZ | 8h |
| 337 | 5.7.86 | Monday | 8h? | 2026-11-23 08:00 | 2026-11-23 17:00 | 134d | start no earlier than 2026-11-23 08:00 | KOLINA SCHANTZ | 8h |
| 338 | 5.7.87 | Wendseday | 8h? | 2026-11-25 08:00 | 2026-11-25 17:00 | 132d | start no earlier than 2026-11-25 08:00 | KOLINA SCHANTZ | 8h |
| 339 | 5.7.88 | Friday | 8h? | 2026-11-27 08:00 | 2026-11-27 17:00 | 130d | start no earlier than 2026-11-27 08:00 | KOLINA SCHANTZ | 8h |
| 340 | 5.7.89 | Monday | 8h? | 2026-11-30 08:00 | 2026-11-30 17:00 | 129d | start no earlier than 2026-11-30 08:00 | KOLINA SCHANTZ | 8h |
| 341 | 5.7.90 | Wendseday | 8h? | 2026-12-02 08:00 | 2026-12-02 17:00 | 127d | start no earlier than 2026-12-02 08:00 | KOLINA SCHANTZ | 8h |
| 342 | 5.7.91 | Friday | 8h? | 2026-12-04 08:00 | 2026-12-04 17:00 | 125d | start no earlier than 2026-12-04 08:00 | KOLINA SCHANTZ | 8h |
| 343 | 5.7.92 | Monday | 8h? | 2026-12-07 08:00 | 2026-12-07 17:00 | 124d | start no earlier than 2026-12-07 08:00 | KOLINA SCHANTZ | 8h |
| 344 | 5.7.93 | Wendseday | 8h? | 2026-12-09 08:00 | 2026-12-09 17:00 | 122d | start no earlier than 2026-12-09 08:00 | KOLINA SCHANTZ | 8h |
| 345 | 5.7.94 | Friday | 8h? | 2026-12-11 08:00 | 2026-12-11 17:00 | 120d | start no earlier than 2026-12-11 08:00 | KOLINA SCHANTZ | 8h |
| 346 | 5.7.95 | Monday | 8h? | 2026-12-14 08:00 | 2026-12-14 17:00 | 119d | start no earlier than 2026-12-14 08:00 | KOLINA SCHANTZ | 8h |
| 347 | 5.7.96 | Wendseday | 8h? | 2026-12-16 08:00 | 2026-12-16 17:00 | 117d | start no earlier than 2026-12-16 08:00 | KOLINA SCHANTZ | 8h |
| 348 | 5.7.97 | Friday | 8h? | 2026-12-18 08:00 | 2026-12-18 17:00 | 115d | start no earlier than 2026-12-18 08:00 | KOLINA SCHANTZ | 8h |
| 349 | 5.7.98 | Monday | 8h? | 2026-12-21 08:00 | 2026-12-21 17:00 | 114d | start no earlier than 2026-12-21 08:00 | KOLINA SCHANTZ | 8h |
| 350 | 5.7.99 | Wendseday | 8h? | 2026-12-23 08:00 | 2026-12-23 17:00 | 112d | start no earlier than 2026-12-23 08:00 | KOLINA SCHANTZ | 8h |
| 351 | 5.7.100 | Friday | 8h? | 2026-12-25 08:00 | 2026-12-25 17:00 | 110d | start no earlier than 2026-12-25 08:00 | KOLINA SCHANTZ | 8h |
| 352 | 5.7.101 | Monday | 8h? | 2026-12-28 08:00 | 2026-12-28 17:00 | 109d | start no earlier than 2026-12-28 08:00 | KOLINA SCHANTZ | 8h |
| 353 | 5.7.102 | Wendseday | 8h? | 2026-12-30 08:00 | 2026-12-30 17:00 | 107d | start no earlier than 2026-12-30 08:00 | KOLINA SCHANTZ | 8h |
| 354 | 5.7.103 | Friday | 8h? | 2027-01-01 08:00 | 2027-01-01 17:00 | 105d | start no earlier than 2027-01-01 08:00 | KOLINA SCHANTZ | 8h |

| ID | WBS | Task | Type | Duration | Start | Finish | Total slack | Free slack | Constraint | Deadline | Resources | Work |
| --- | --- | --- | --- | --- | --- | --- | --- | --- | --- | --- | --- | --- |
| 355 | 5.8 | **GEVO De Bottlenecking Design Engineering** |  | 4d? | 2026-05-06 08:00 | 2026-05-11 17:00 | 274d |  |  |  |  | 40h |
| 356 | 5.8.1 | review Drawings with Nate, |  | 8h? | 2026-05-06 08:00 | 2026-05-06 17:00 | 277d |  | start no earlier than 2026-05-06 08:00 |  | KYLE MERRILL | 8h |
| 357 | 5.8.2 | submitt any markups to express rendering |  | 8h? | 2026-05-06 08:00 | 2026-05-06 17:00 | 277d |  | start no earlier than 2026-05-06 08:00 |  | KYLE MERRILL | 8h |
| 358 | 5.8.3 | verify completion with GEVO |  | 8h? | 2026-05-06 08:00 | 2026-05-06 17:00 | 277d |  | start no earlier than 2026-05-06 08:00 |  | KYLE MERRILL | 8h |
| 359 | 5.8.4 | Arc Flash Study? |  | 8h? | 2026-05-11 08:00 | 2026-05-11 17:00 | 274d |  | start no earlier than 2026-05-11 08:00 |  | KYLE MERRILL | 8h |
| 360 | 5.8.5 | Engineering Review |  | 8h? | 2026-05-06 08:00 | 2026-05-06 17:00 | 277d |  | start no earlier than 2026-05-06 08:00 |  | KYLE MERRILL | 8h |
| 361 | 5.9 | **Gevo De - BottleNecking Field Installation** | inactive | 71d? | 2026-05-22 08:00 | 2026-08-28 17:00 | 195d |  |  |  |  | 350h |
| 362 | 5.9.1 | PanelBuild | inactive | 8h? | 2026-05-22 08:00 | 2026-05-22 17:00 | 265d |  | start no earlier than 2026-05-22 08:00 |  |  | 150h |
| 363 | 5.9.2 | Field Installation | inactive | 8h? | 2026-08-28 08:00 | 2026-08-28 17:00 | 195d |  | finish no earlier than 2026-08-28 17:00 |  |  | 200h |
| 364 | 5.10 | **Gevo Grains future grind structure** | inactive | 53d? | 2026-07-20 08:00 | 2026-09-30 17:00 | 172d |  |  |  |  | 560h |
| 365 | 5.10.1 | Panel Builds | inactive | 336h? | 2026-07-20 08:00 | 2026-09-15 17:00 | 183d |  | finish no earlier than 2026-09-15 17:00 |  |  | 160h |
| 366 | 5.10.2 | Field Installation | inactive | 304h? | 2026-08-10 08:00 | 2026-09-30 17:00 | 172d |  | finish no earlier than 2026-09-30 17:00 |  |  | 400h |
| 367 | 5.11 | **Steam EVAP STG** |  | 23d? | 2026-05-11 08:00 | 2026-06-10 17:00 | -1.7d | 0d |  |  |  | 62h |
| 368 | 5.11.1 | Programming follow up with direct Automation |  | 3.2h? | 2026-05-11 08:00 | 2026-05-12 14:36 | -1.7d | 0d | start no earlier than 2026-05-11 08:00 | 2026-05-08 17:00 | SETH PETERSON [25%]; KOLINA SCHANTZ | 2h |
| 369 | 5.11.2 | 2nd programming follow up with Direct Automation |  | 4h? | 2026-05-12 08:00 | 2026-05-12 12:00 | 3.5d |  | start no earlier than 2026-05-12 08:00 | 2026-05-15 17:00 | SETH PETERSON [25%]; KOLINA SCHANTZ [25%] | 2h |
| 370 | 5.11.3 | Follow up / programming Ewing controls Bob |  | 4h? | 2026-05-13 08:00 | 2026-05-13 12:00 | 7.5d |  | start no earlier than 2026-05-13 08:00 | 2026-05-22 17:00 | SETH PETERSON [25%]; KOLINA SCHANTZ [25%] | 2h |
| 371 | 5.11.4 | Finnish Wiring any devices |  | 32h? | 2026-05-14 08:00 | 2026-05-19 17:00 | 268d |  | start no earlier than 2026-05-14 08:00 |  | SETH PETERSON [25%]; KOLINA SCHANTZ [25%] | 16h |
| 372 | 5.11.5 | loop check and commisioning point checks |  | 64h? | 2026-05-15 08:00 | 2026-05-26 17:00 | 263d |  | start no earlier than 2026-05-15 08:00 |  | SETH PETERSON [25%]; KOLINA SCHANTZ [25%] | 16h |
| 373 | 5.11.6 | start up supports |  | 64h? | 2026-06-01 08:00 | 2026-06-10 17:00 | 252d |  | finish no earlier than 2026-06-10 17:00 |  | SETH PETERSON [25%]; KOLINA SCHANTZ [25%] | 24h |
| 374 | 5.12 | **Gevo Boiler Memory Chip Installation** |  | 11d | 2026-05-14 08:00 | 2026-05-28 17:00 |  |  |  | 2026-05-22 17:00 |  | 16h |
| 375 | 5.12.1 | Solder ram chips |  | 16h? | 2026-05-14 08:00 | 2026-05-28 17:00 | 261d |  | start no earlier than 2026-05-14 08:00 |  | KOLINA SCHANTZ; SETH PETERSON | 16h |
| 376 | 5.13 | **HM 4 Running in Reverse Troubleshooting** |  | 3.5d? | 2026-05-06 08:00 | 2026-05-11 12:00 | 274.5d |  |  |  |  | 22h |
| 377 | 5.13.1 | Verify switch wiring |  | 8h? | 2026-05-06 08:00 | 2026-05-11 12:00 | 274.5d |  | start no earlier than 2026-05-06 08:00 |  | KOLINA SCHANTZ [62.5%]; SETH PETERSON [62.5%] | 5h |
| 378 | 5.13.2 | verify contactor coil wiring |  | 7.94h? | 2026-05-06 08:00 | 2026-05-11 11:58 | 274.5d |  | start no earlier than 2026-05-06 08:00 |  | KOLINA SCHANTZ [63%]; SETH PETERSON [63%] | 5h |
| 379 | 5.13.3 | verify any interlocks |  | 7.94h? | 2026-05-06 08:00 | 2026-05-11 11:58 | 274.5d |  | start no earlier than 2026-05-06 08:00 |  | KOLINA SCHANTZ [63%]; SETH PETERSON [63%] | 5h |
| 380 | 5.13.4 | Verify any issues / programming with soft start |  | 7.94h? | 2026-05-06 08:00 | 2026-05-11 11:58 | 274.5d |  | start no earlier than 2026-05-06 08:00 |  | KOLINA SCHANTZ [63%]; SETH PETERSON [63%] | 5h |
| 381 | 5.13.5 | LIMIT SWITCH / BAR ON HAMMER MILL AIR OPERATED SOLENOID MAY BE POWERED BY BREAKER IN BUCKET |  | 3.17h? | 2026-05-06 08:00 | 2026-05-11 09:35 | 274.8d |  | start no earlier than 2026-05-06 08:00 |  | KOLINA SCHANTZ [63%]; SETH PETERSON [63%] | 2h |
| 382 | 5.14 | future process expansion |  | 1720h? | 2026-08-03 08:00 | 2027-05-28 17:00 | 0d |  | finish no earlier than 2027-05-28 17:00 |  |  | 300h |

| ID | WBS | Task | Type | Duration | Start | Finish | Predecessors | Total slack | Free slack | Constraint | Resources | Work |
| --- | --- | --- | --- | --- | --- | --- | --- | --- | --- | --- | --- | --- |
| 383 | 5.15 | **GEVO - GRAINS DUST COLLECTION / RECLAIM PROGRAMING** |  | 1d? | 2026-05-06 08:00 | 2026-05-06 17:00 |  | 277d |  |  |  |  |
| 384 | 5.15.1 | CHECK TIMING ON SWITCHING FROM TRUCK TO RECLAIM |  | 8h? | 2026-05-06 08:00 | 2026-05-06 17:00 |  | 277d |  | start no earlier than 2026-05-06 08:00 |  |  |
| 385 | 5.15.2 | WANT TO SHORTEN TO 7-8 VERIFY CLEAN OUT |  | 8h? | 2026-05-06 08:00 | 2026-05-06 17:00 |  | 277d |  | start no earlier than 2026-05-06 08:00 |  |  |
| 386 | 5.15.3 | C&E FOR GRAINS |  | 8h? | 2026-05-06 08:00 | 2026-05-06 17:00 |  | 277d |  | start no earlier than 2026-05-06 08:00 |  |  |
| 387 | 5.16 | **GENERATOR FUNCTIONALITY / VS EQUIPMENT LOADS** |  | 1d? | 2026-05-06 08:00 | 2026-05-06 17:00 |  | 277d |  |  |  |  |
| 388 | 5.16.1 | VERIFY DCS IS POWERED BY GENERATOR |  | 8h? | 2026-05-06 08:00 | 2026-05-06 17:00 |  | 277d |  | start no earlier than 2026-05-06 08:00 |  |  |
| 389 | 5.16.2 | RADIO REPEATER IN PROCESS MCC |  | 8h? | 2026-05-06 08:00 | 2026-05-06 17:00 |  | 277d |  | start no earlier than 2026-05-06 08:00 |  |  |
| 390 | 5.16.3 | CHECK RUN COMMAND |  | 8h? | 2026-05-06 08:00 | 2026-05-06 17:00 |  | 277d |  | start no earlier than 2026-05-06 08:00 |  |  |
| 391 | 5.16.4 | Backup Generator Run Command Signal |  | 8h? | 2026-05-06 08:00 | 2026-05-06 17:00 |  | 277d |  | start no earlier than 2026-05-06 08:00 |  |  |
| 392 | 5.16.5 | S.A.F. Plant |  | 8h? | 2026-05-06 08:00 | 2026-05-06 17:00 |  | 277d |  | start no earlier than 2026-05-06 08:00 |  |  |
| 393 | 5.17 | VERFY ALL HAMMER MILLS HAVE CONTACTORS REPLACED AND ADDED |  | 1h? | 2026-05-12 08:00 | 2026-05-12 09:00 |  | 273.88d |  | start no earlier than 2026-05-12 08:00 | SETH PETERSON; KOLINA SCHANTZ | 2h |
| 394 | 5.18 | <New Task> |  | 8h? | 2026-05-27 08:00 | 2026-05-27 17:00 |  | 262d |  | start no earlier than 2026-05-27 08:00 |  |  |
| 395 | 5.19 | <New Task> |  | 8h? | 2026-05-08 08:00 | 2026-05-08 17:00 |  | 275d |  | start no earlier than 2026-05-08 08:00 |  |  |
| 396 | 5.20 | SAF WORK | inactive | 6448h? | 2027-11-30 08:00 | 2030-12-31 17:00 |  | 0d |  | finish no earlier than 2030-12-31 17:00 |  | 5000h |
| 397 | 6 | **W.C.S.** |  | 107d | 2026-05-05 08:00 | 2026-09-30 17:00 |  |  |  |  |  | 400h |
| 398 | 6.1 | Instrument Installation |  | 512h? | 2026-05-05 08:00 | 2026-07-31 17:00 |  | 215d |  | finish no earlier than 2026-07-31 17:00 |  | 100h |
| 399 | 6.2 | RIO 2000 control Panel Wiring |  | 648h? | 2026-05-11 08:00 | 2026-08-31 17:00 |  | 194d |  | finish no earlier than 2026-08-31 17:00 |  | 60h |
| 400 | 6.3 | Tubing assistance |  | 504h? | 2026-07-06 08:00 | 2026-09-30 17:00 |  | 172d |  | finish no earlier than 2026-09-30 17:00 |  | 40h |
| 401 | 6.4 | start up support / commissioning Assistance |  | 8h? | 2026-05-05 08:00 | 2026-05-05 17:00 |  | 278d |  | start no earlier than 2026-05-05 08:00 |  | 200h |
| 402 | 7 | **CHORD** |  | 43d? | 2026-05-06 08:00 | 2026-07-03 17:00 |  | 0d |  |  |  | 488h |
| 403 | 7.1 | **Reservation Locations Misc Troubleshooting** |  | 43d? | 2026-05-06 08:00 | 2026-05-29 17:00 |  |  |  |  | LOREN MCCRAY | 488h |
| 404 | 7.1.1 | Vegetation NorthTest oil, water, and gas need to be brought in to PLC. Prosoft card is in place, may need comm card for port 2 of TF |  | 8h? | 2026-05-06 08:00 | 2026-05-06 17:00 |  | 235d | 0d | start no earlier than 2026-05-06 08:00 |  | 8h |
| 405 | 7.1.2 | Vegetation SouthHP Flare meter modbus loop is broken. I&E needs to fix. Gauge off tag will end up at SCADA_REALs[218] |  | 8h? | 2026-05-07 08:00 | 2026-05-07 17:00 | 404 | 235d | 0d | start no earlier than 2026-05-06 08:00 |  | 8h |
| 406 | 7.1.3 | Vegetation SouthComms to CTB test oil meter are broken. I&E needs to fix and then viewx/FO needs to add |  | 8h? | 2026-05-08 08:00 | 2026-05-08 17:00 | 405 | 235d | 0d | start no earlier than 2026-05-06 08:00 |  | 8h |
| 407 | 7.1.4 | Vegetation SouthComms to CTB test water meter are broken. I&E needs to fix and then viewx/FO needs to add |  | 8h? | 2026-05-11 08:00 | 2026-05-11 17:00 | 406 | 235d | 0d | start no earlier than 2026-05-06 08:00 |  | 8h |
| 408 | 7.1.5 | Vegetation SouthComms to CTB test gas meter are broken. I&E needs to fix and then viewx/FO needs to add |  | 8h? | 2026-05-12 08:00 | 2026-05-12 17:00 | 407 | 235d | 0d | start no earlier than 2026-05-06 08:00 |  | 8h |
| 409 | 7.1.6 | Vegetation SouthComms to Moss test gas meter are broken. I&E needs to fix and then viewx/FO needs to add |  | 8h? | 2026-05-13 08:00 | 2026-05-13 17:00 | 408 | 235d | 0d | start no earlier than 2026-05-06 08:00 |  | 8h |
| 410 | 7.1.7 | Weathers SouthWeathers S Test Gas Meter needs to be added to FO. I&E needs to get comms to meters |  | 8h? | 2026-05-14 08:00 | 2026-05-14 17:00 | 409 | 235d | 0d | start no earlier than 2026-05-06 08:00 |  | 8h |
| 411 | 7.1.8 | Weathers SouthWeathers S Test Oil Meter needs to be added to FO. I&E needs to get comms to meters |  | 8h? | 2026-05-15 08:00 | 2026-05-15 17:00 | 410 | 235d | 0d | start no earlier than 2026-05-06 08:00 |  | 8h |
| 412 | 7.1.9 | Weathers SouthWeathers S Test Water Meter needs to be added to FO. I&E needs to get comms to meters |  | 8h? | 2026-05-18 08:00 | 2026-05-18 17:00 | 411 | 235d | 0d | start no earlier than 2026-05-06 08:00 |  | 8h |
| 413 | 7.1.10 | Weathers NorthWeathers N Test Gas Meter needs to be added to FO. I&E needs to get comms to meters |  | 8h? | 2026-05-19 08:00 | 2026-05-19 17:00 | 412 | 235d | 0d | start no earlier than 2026-05-06 08:00 |  | 8h |
| 414 | 7.1.11 | Weathers NorthWeathers N Test Oil Meter needs to be added to FO. I&E needs to get comms to meters |  | 8h? | 2026-05-20 08:00 | 2026-05-20 17:00 | 413 | 235d | 0d | start no earlier than 2026-05-06 08:00 |  | 8h |
| 415 | 7.1.12 | Weathers NorthWeathers N Test Water Meter needs to be added to FO. I&E needs to get comms to meters |  | 8h? | 2026-05-21 08:00 | 2026-05-21 17:00 | 414 | 235d | 0d | start no earlier than 2026-05-06 08:00 |  | 8h |
| 416 | 7.1.13 | Sewings WestHP Flare meter not powered up. I&E to restore power and comms |  | 8h? | 2026-05-22 08:00 | 2026-05-22 17:00 | 415 | 235d | 0d | start no earlier than 2026-05-06 08:00 |  | 8h |
| 417 | 7.1.14 | Sewings WestLP Flare meter 1 not powered up. I&E to restore power and comms |  | 8h? | 2026-05-25 08:00 | 2026-05-25 17:00 | 416 | 235d | 0d | start no earlier than 2026-05-06 08:00 |  | 8h |
| 418 | 7.1.15 | Sewings WestLP Flare meter 2 not powered up. I&E to restore power and comms |  | 8h? | 2026-05-26 08:00 | 2026-05-26 17:00 | 417 | 235d | 0d | start no earlier than 2026-05-06 08:00 |  | 8h |
| 419 | 7.1.16 | Sewings WestI&E to verify SG Condensate Meter Numbers. Is there a meter actually totalizing something into these tags? |  | 8h? | 2026-05-27 08:00 | 2026-05-27 17:00 | 418 | 235d | 0d | start no earlier than 2026-05-06 08:00 |  | 8h |
| 420 | 7.1.17 | Sewings EastI&E to look into adding comms to each treater |  | 8h? | 2026-05-28 08:00 | 2026-05-28 17:00 | 419 | 235d | 0d | start no earlier than 2026-05-06 08:00 |  | 8h |
| 421 | 7.1.18 | MHA 1-06-31HP flare meter is battery powered, when display dies it holds last values and keeps totalizing in ROC. I&E to fix. Also meter face doesnt match calculated value, which should we use? |  | 8h? | 2026-05-29 08:00 | 2026-05-29 17:00 | 420 | 235d | 0d | start no earlier than 2026-05-06 08:00 |  | 8h |
| 422 | 7.1.19 | Buffalo PadHP flare meter not updating. I&E to investigate |  | 8h? | 2026-06-01 08:00 | 2026-06-01 17:00 | 421 | 235d | 0d | start no earlier than 2026-05-06 08:00 |  | 8h |
| 423 | 7.1.20 | Buffalo PadBulk treater gas meter not updating. I&E to investigate |  | 8h? | 2026-06-02 08:00 | 2026-06-02 17:00 | 422 | 235d | 0d | start no earlier than 2026-05-06 08:00 |  | 8h |
| 424 | 7.1.21 | Buffalo PadTest treater gas meter not updating. I&E to investigate |  | 8h? | 2026-06-03 08:00 | 2026-06-03 17:00 | 423 | 235d | 0d | start no earlier than 2026-05-06 08:00 |  | 8h |
| 425 | 7.1.22 | Buffalo Pad2-06 Treater Gas meter not updating. I&E to investigate |  | 8h? | 2026-06-04 08:00 | 2026-06-04 17:00 | 424 | 235d | 0d | start no earlier than 2026-05-06 08:00 |  | 8h |
| 426 | 7.1.23 | Buffalo Pad3-06 Treater Gas meter not updating. I&E to investigate |  | 8h? | 2026-06-05 08:00 | 2026-06-05 17:00 | 425 | 235d | 0d | start no earlier than 2026-05-06 08:00 |  | 8h |
| 427 | 7.1.24 | BullwinkleTreater water meter totalizers not coming in to program. Move inputs to HART card 3, change mapping in structured text, message to ROC with red lion, and add to history segment - I&E |  | 8h? | 2026-06-08 08:00 | 2026-06-08 17:00 | 426 | 235d | 0d | start no earlier than 2026-05-06 08:00 |  | 8h |
| 428 | 7.1.25 | Rocky 6-9DI&E needs to bring flow meter from inside tank battery in to program. Then it will need to be added to FO |  | 8h? | 2026-06-09 08:00 | 2026-06-09 17:00 | 427 | 235d | 0d | start no earlier than 2026-05-06 08:00 |  | 8h |
| 429 | 7.1.26 | Dogs EastThere is a modbus connection to the gas shack and LACT but no data is coming in. I&E to fix |  | 8h? | 2026-06-10 08:00 | 2026-06-10 17:00 | 428 | 235d | 0d | start no earlier than 2026-05-06 08:00 |  | 8h |
| 430 | 7.1.27 | Dogs EastThere is a TF in treater shack that is not powered. I&E to determine if it is needed. |  | 8h? | 2026-06-11 08:00 | 2026-06-11 17:00 | 429 | 235d | 0d | start no earlier than 2026-05-06 08:00 |  | 8h |
| 431 | 7.1.28 | LK Erickson QuilliamQuilliam H4 flare meter is not updating. Comm loss to sensors - I&E |  | 8h? | 2026-06-12 08:00 | 2026-06-12 17:00 | 430 | 235d | 0d | start no earlier than 2026-05-06 08:00 |  | 8h |
| 432 | 7.1.29 | LK BICE 2/3/4/5LP Flare meter modbus chain is broken and is not coming into plc. i&e restore comms and add gauge off values. |  | 8h? | 2026-06-15 08:00 | 2026-06-15 17:00 | 431 | 235d | 0d | start no earlier than 2026-05-06 08:00 |  | 8h |
| 433 | 7.1.30 | LK A QTR CIR -2/3 hp flare gas XRC's dont display a totalizer on screens. i&e needs to add totals to screen. |  | 8h? | 2026-06-16 08:00 | 2026-06-16 17:00 | 432 | 235d | 0d | start no earlier than 2026-05-06 08:00 |  | 8h |
| 434 | 7.1.31 | LK A QTR CIR -2/3 xrc in h3 is in sleep mode, battery needs to be checked/ replaces. i&e to investigate. |  | 8h? | 2026-06-17 08:00 | 2026-06-17 17:00 | 433 | 235d | 0d | start no earlier than 2026-05-06 08:00 |  | 8h |
| 435 | 7.1.32 | LK SUMMERFIELD -4H4 flare gas meter screen is blank and comms are failed i&e to investigate. |  | 8h? | 2026-06-18 08:00 | 2026-06-18 17:00 | 434 | 235d | 0d | start no earlier than 2026-05-06 08:00 |  | 8h |
| 436 | 7.1.33 | LK POHRIBNAK CTB 2/3/4LK POHRIBNAK-147-96-16H-2 FLR HP processors was replaced and modbus chain was broken. I&e need to investigate getting totalflow comms restored/added |  | 8h? | 2026-06-19 08:00 | 2026-06-19 17:00 | 435 | 235d | 0d | start no earlier than 2026-05-06 08:00 |  | 8h |
| 437 | 7.1.34 | LK POHRIBNAK CTB 2/3/4LK POHRIBNAK-147-96-16H-3 FLR HP processor was replaced and modbus chain was broken. I&e need to investigate getting totalflow comms restored/added |  | 8h? | 2026-06-22 08:00 | 2026-06-22 17:00 | 436 | 235d | 0d | start no earlier than 2026-05-06 08:00 |  | 8h |
| 438 | 7.1.35 | LK POHRIBNAK CTB 2/3/4LK POHRIBNAK-147-96-16H-4 FLR HP Only orignal processor that has modbus cabablity. I&E need to investigate bringing total flows in. |  | 8h? | 2026-06-23 08:00 | 2026-06-23 17:00 | 437 | 235d | 0d | start no earlier than 2026-05-06 08:00 |  | 8h |
| 439 | 7.1.36 | LK POHRIBNAK CTB 2/3/4POHRIBNAK-147-96-16H-2 Oil Meter Total has a pulse input from plc coming in to scada as a today and yesterday but there is no true accumulator. I&e to discuss and investigate how total should be brought in. Meters have screens that d |  | 8h? | 2026-06-24 08:00 | 2026-06-24 17:00 | 438 | 235d | 0d | start no earlier than 2026-05-06 08:00 |  | 8h |
| 440 | 7.1.37 | LK POHRIBNAK CTB 2/3/4POHRIBNAK-147-96-16H-3 Oil Meter Total has a pulse input from plc coming in to scada as a today and yesterday but there is no true accumulator. I&e to discuss and investigate how total should be brought in. Meters have screens that d |  | 8h? | 2026-06-25 08:00 | 2026-06-25 17:00 | 439 | 235d | 0d | start no earlier than 2026-05-06 08:00 |  | 8h |
| 441 | 7.1.38 | LK POHRIBNAK CTB 2/3/4POHRIBNAK-147-96-16H-4Oil Meter Total has a pulse input from plc coming in to scada as a today and yesterday but there is no true accumulator. I&e to discuss and investigate how total should be brought in. Meters have screens that di |  | 8h? | 2026-06-26 08:00 | 2026-06-26 17:00 | 440 | 235d | 0d | start no earlier than 2026-05-06 08:00 |  | 8h |
| 442 | 7.1.39 | LK POHRIBNAK CTB 2/3/4POHRIBNAK-147-96-16H-2 Water Meter Total has a pulse input from plc coming in to scada as a today and yesterday but there is no true accumulator. I&e to discuss and investigate how total should be brought in. Meters have screens that |  | 8h? | 2026-06-29 08:00 | 2026-06-29 17:00 | 441 | 235d | 0d | start no earlier than 2026-05-06 08:00 |  | 8h |
| 443 | 7.1.40 | LK POHRIBNAK CTB 2/3/4POHRIBNAK-147-96-16H-3 Water Meter Total has a pulse input from plc coming in to scada as a today and yesterday but there is no true accumulator. I&e to discuss and investigate how total should be brought in. Meters have screens that |  | 8h? | 2026-06-30 08:00 | 2026-06-30 17:00 | 442 | 235d | 0d | start no earlier than 2026-05-06 08:00 |  | 8h |
| 444 | 7.1.41 | LK POHRIBNAK CTB 2/3/4POHRIBNAK-147-96-16H-4 Water Meter Total has a pulse input from plc coming in to scada as a today and yesterday but there is no true accumulator. I&e to discuss and investigate how total should be brought in. Meters have screens that |  | 8h? | 2026-07-01 08:00 | 2026-07-01 17:00 | 443 | 235d | 0d | start no earlier than 2026-05-06 08:00 |  | 8h |
| 445 | 7.1.42 | YALE 27B CTBB Test Treater HP flare meter needs to have comms restored and brought into scada and FO. i&e to investigate and get tags to scada and fo |  | 8h? | 2026-07-02 08:00 | 2026-07-02 17:00 | 444 | 235d | 0d | start no earlier than 2026-05-06 08:00 |  | 8h |
| 446 | 7.1.43 | YALE 22C/27B CTB VRU gas meters that are out of service are still in functioning condition, can i&e remove and hold in stock? |  | 8h? | 2026-07-03 08:00 | 2026-07-03 17:00 | 445 | 235d |  | start no earlier than 2026-05-06 08:00 |  | 8h |
| 447 | 7.2 | Gas Lift Project |  | 8h? | 2026-05-06 08:00 | 2026-05-06 17:00 |  | 277d |  | start no earlier than 2026-05-06 08:00 |  |  |

| ID | WBS | Task | Duration | Start | Finish | Predecessors | Complete | Remaining | Actual start | Total slack | Free slack | Constraint | Resources | Work | Actual work |
| --- | --- | --- | --- | --- | --- | --- | --- | --- | --- | --- | --- | --- | --- | --- | --- |
| 448 | 8 | **DAKOTA MIDSTREAM** | 86.51d? | 2026-05-06 08:00 A | 2026-06-30 17:00 |  | 83% | 6.73d? |  |  |  |  |  | 458.14h | 315.4h |
| 449 | 8.1 | **DMS FIBER SPLICING** | 18.75d | 2026-05-06 08:00 | 2026-06-19 12:00 |  | 68% | 10.56d | 2026-05-11 08:00 |  |  |  |  | 256h | 172.8h |
| 450 | 8.1.1 | COUGAR | 10h? | 2026-05-11 08:00 A | 2026-05-12 10:00 |  | 20% | 8h? |  | 273.75d |  | start no earlier than 2026-05-11 08:00 | JACKSON KING; DUSTIN HOWE | 20h | 4h |
| 451 | 8.1.2 | SS1 | 8h? | 2026-05-12 10:00 A | 2026-05-13 10:00 A | 450 | 100% |  |  |  |  | finish no earlier than 2026-05-12 17:00 | DUSTIN HOWE; JACKSON KING | 16h | 16h |
| 452 | 8.1.3 | SS2 | 8h? | 2026-05-18 08:00 A | 2026-05-18 17:00 A | 451 | 100% |  |  |  |  | finish no earlier than 2026-05-18 17:00 | DUSTIN HOWE; JACKSON KING | 16h | 16h |
| 453 | 8.1.4 | SS3 | 8h? | 2026-05-19 08:00 A | 2026-05-19 17:00 A | 452 | 100% |  |  |  |  | start no earlier than 2026-05-06 08:00 | DUSTIN HOWE; JACKSON KING | 16h | 16h |
| 454 | 8.1.5 | SS4 | 8h? | 2026-05-20 08:00 A | 2026-05-20 17:00 A | 453 | 100% |  |  |  |  | start no earlier than 2026-05-06 08:00 | DUSTIN HOWE; JACKSON KING | 16h | 16h |
| 455 | 8.1.6 | SS5 | 8h? | 2026-05-21 08:00 | 2026-05-21 17:00 | 454 |  |  |  | 265d | 0d | start no earlier than 2026-05-06 08:00 | DUSTIN HOWE; JACKSON KING | 16h |  |
| 456 | 8.1.7 | ERIKSON PAD | 8h? | 2026-05-22 08:00 | 2026-05-22 17:00 | 455 |  |  |  | 265d |  | start no earlier than 2026-05-06 08:00 | DUSTIN HOWE; JACKSON KING | 16h |  |
| 457 | 8.1.8 | TBRANCH 1 | 8h? | 2026-05-25 08:00 A | 2026-05-25 17:00 A | 456 | 100% |  |  |  |  | start no earlier than 2026-05-06 08:00 | DUSTIN HOWE; JACKSON KING | 16h | 16h |
| 458 | 8.1.9 | TBRANCH 2 | 8h? | 2026-05-26 08:00 A | 2026-05-26 17:00 | 457 | 80% | 1.6h? |  | 263d |  | start no earlier than 2026-05-06 08:00 | DUSTIN HOWE; JACKSON KING | 16h | 12.8h |
| 459 | 8.1.10 | TBRANCH 3 | 8h? | 2026-05-27 08:00 A | 2026-05-27 17:00 A | 458 | 100% |  |  |  |  | start no earlier than 2026-05-06 08:00 | DUSTIN HOWE; JACKSON KING | 16h | 16h |
| 460 | 8.1.11 | TBRANCH 4 | 8h? | 2026-05-28 08:00 A | 2026-05-28 17:00 A | 459 | 100% |  |  |  |  | start no earlier than 2026-05-06 08:00 | DUSTIN HOWE; JACKSON KING | 16h | 16h |
| 461 | 8.1.12 | SOUTH BICE | 8h? | 2026-05-29 08:00 | 2026-05-29 17:00 | 460 |  |  |  | 259d | 0d | start no earlier than 2026-05-06 08:00 | DUSTIN HOWE; JACKSON KING | 16h |  |
| 462 | 8.1.13 | NORTH BICE | 8h? | 2026-06-01 08:00 | 2026-06-01 17:00 | 461 |  |  |  | 259d |  | start no earlier than 2026-05-06 08:00 | DUSTIN HOWE; JACKSON KING | 16h |  |
| 463 | 8.1.14 | SS6 | 8h? | 2026-06-02 08:00 A | 2026-06-02 17:00 A | 462 | 100% |  |  |  |  | start no earlier than 2026-05-06 08:00 | DUSTIN HOWE; JACKSON KING | 16h | 16h |
| 464 | 8.1.15 | SS7 | 8h? | 2026-06-03 08:00 A | 2026-06-03 17:00 A | 463 | 100% |  |  |  |  | start no earlier than 2026-05-06 08:00 | DUSTIN HOWE; JACKSON KING | 16h | 16h |
| 465 | 8.1.16 | HAY DRAW | 6h? | 2026-06-04 08:00 A | 2026-06-04 15:00 A | 464 | 100% |  |  |  |  | start no earlier than 2026-05-06 08:00 | DUSTIN HOWE; JACKSON KING | 12h | 12h |
| 466 | 8.2 | **DMS CLR TO COUGAR SPLICING** | 86.51d? | 2026-05-06 08:00 A | 2026-09-03 13:07 |  | 87% | 11.59d? |  | 191.49d |  |  |  | 202.14h | 142.6h |
| 467 | 8.2.1 | **Fiber Termination at Cougar** | 22.5d? | 2026-05-06 08:00 A | 2026-06-05 12:00 |  | 50% | 11.25d? |  | 255.5d |  |  |  | 46h | 23.02h |
| 468 | 8.2.1.1 | determine any supports / raceway needed for fiber cabling / building entries | 4h? | 2026-06-05 08:00 | 2026-06-05 12:00 |  |  |  |  | 255.5d |  | start no earlier than 2026-06-05 08:00 | DUSTIN HOWE [37.5%]; JACKSON KING [37.5%] | 3h |  |
| 469 | 8.2.1.2 | Put MTO together and review materials. | 2.63h? | 2026-05-06 08:00 A | 2026-05-06 10:37 A |  | 100% |  |  |  |  | start no earlier than 2026-05-06 08:00 | DUSTIN HOWE [38%]; JACKSON KING [38%] | 2h | 2h |
| 470 | 8.2.1.3 | Sent MTO off for quote and verifiy pricing | 1.31h? | 2026-05-06 08:00 A | 2026-05-06 09:18 A |  | 100% |  |  |  |  | start no earlier than 2026-05-06 08:00 | DUSTIN HOWE [38%]; JACKSON KING [38%] | 1h | 1h |
| 471 | 8.2.1.4 | Verify plan with customer. | 2.63h? | 2026-05-06 08:00 A | 2026-05-06 10:37 A |  | 100% |  |  |  |  | start no earlier than 2026-05-06 08:00 | DUSTIN HOWE [38%]; JACKSON KING [38%] | 2h | 2h |
| 472 | 8.2.1.5 | Install any required Raceways, supports, enclosures, | 2.63h? | 2026-05-06 08:00 A | 2026-05-06 10:37 A |  | 100% |  |  |  |  | start no earlier than 2026-05-06 08:00 | DUSTIN HOWE [38%]; JACKSON KING [38%] | 2h | 2h |
| 473 | 8.2.1.6 | Bring Fiber Cabling into building | 2.63h? | 2026-05-06 08:00 A | 2026-05-06 10:37 A |  | 100% |  |  |  |  | start no earlier than 2026-05-06 08:00 | DUSTIN HOWE [38%]; JACKSON KING [38%] | 2h | 2h |
| 474 | 8.2.1.7 | strip and splice fiber cabling with correct ends. | 5.26h? | 2026-05-06 08:00 A | 2026-05-06 14:15 A |  | 100% |  |  |  |  | start no earlier than 2026-05-06 08:00 | DUSTIN HOWE [38%]; JACKSON KING [38%] | 4h | 4h |
| 475 | 8.2.1.8 | cap ends on fiber to ensure clenliness until ready to test | 39.47h? | 2026-05-06 08:00 A | 2026-05-12 16:28 |  | 33% | 26.29h? |  | 273.07d |  | start no earlier than 2026-05-06 08:00 | DUSTIN HOWE [38%]; JACKSON KING [38%] | 30h | 10.02h |

| ID | WBS | Task | Duration | Start | Finish | Predecessors | Complete | Constraint | Resources | Work | Actual work |
| --- | --- | --- | --- | --- | --- | --- | --- | --- | --- | --- | --- |
| 476 | 8.2.2 | **Hand Hole #1** | 49.98d? | 2026-06-05 13:00 A | 2026-08-14 11:50 A | 467 | 100% |  |  | 10.5h | 10.5h |
| 477 | 8.2.2.1 | Locate Hand Hole, may need to coordinate with badlands | 4h? | 2026-06-05 13:00 A | 2026-06-05 17:00 A |  | 100% | start no earlier than 2026-05-06 08:00 | DUSTIN HOWE [12.5%]; JACKSON KING [12.5%] | 1h | 1h |
| 478 | 8.2.2.2 | HAND DIG up Hand hole remove plywood cover | 83.85h? | 2026-06-05 13:00 A | 2026-08-14 11:50 A |  | 100% | start no earlier than 2026-03-30 08:00 | DUSTIN HOWE [13%]; JACKSON KING [13%] | 1h | 1h |
| 479 | 8.2.2.3 | setup fiber splicing tent and table | 1.92h? | 2026-06-05 13:00 A | 2026-06-05 14:55 A |  | 100% | start no earlier than 2026-05-06 08:00 | DUSTIN HOWE [13%]; JACKSON KING [13%] | 0.5h | 0.5h |
| 480 | 8.2.2.4 | Organize the cables and route into tent | 1.92h? | 2026-06-05 13:00 A | 2026-06-05 14:55 A |  | 100% | start no earlier than 2026-05-06 08:00 | DUSTIN HOWE [13%]; JACKSON KING [13%] | 0.5h | 0.5h |
| 481 | 8.2.2.5 | Strip fiber cable outter jacketing / sheath, use the SAFTEY FIBER stripping tool in the fiber splice kit backpack. Or tubing cutter for armor | 1.92h? | 2026-06-05 13:00 A | 2026-06-05 14:55 A |  | 100% | start no earlier than 2026-05-06 08:00 | DUSTIN HOWE [13%]; JACKSON KING [13%] | 0.5h | 0.5h |
| 482 | 8.2.2.6 | strip the jacket 2 ft back to allow enough room to splice in underground splice box | 1.92h? | 2026-06-05 13:00 A | 2026-06-05 14:55 A |  | 100% | start no earlier than 2026-05-06 08:00 | DUSTIN HOWE [13%]; JACKSON KING [13%] | 0.5h | 0.5h |
| 483 | 8.2.2.7 | use the FUSION splicer to splice like color to like color with the fiber. DON’T FORGET HEAT SHRINK TUBES | 7.69h? | 2026-06-05 13:00 A | 2026-06-08 11:41 A |  | 100% | start no earlier than 2026-05-06 08:00 | DUSTIN HOWE [13%]; JACKSON KING [13%] | 2h | 2h |
| 484 | 8.2.2.8 | put fiber splices in casette, | 1.92h? | 2026-06-05 13:00 A | 2026-06-05 14:55 A |  | 100% | start no earlier than 2026-05-06 08:00 | DUSTIN HOWE [13%]; JACKSON KING [13%] | 0.5h | 0.5h |
| 485 | 8.2.2.9 | wrape individual fibers in casette. | 1.92h? | 2026-06-05 13:00 A | 2026-06-05 14:55 A |  | 100% | start no earlier than 2026-05-06 08:00 | DUSTIN HOWE [13%]; JACKSON KING [13%] | 0.5h | 0.5h |
| 486 | 8.2.2.10 | place casette in underground enclosure ensuring the cables go into the SEALED entrances to the enclosure | 1.92h? | 2026-06-05 13:00 A | 2026-06-05 14:55 A |  | 100% | start no earlier than 2026-05-06 08:00 | DUSTIN HOWE [13%]; JACKSON KING [13%] | 0.5h | 0.5h |
| 487 | 8.2.2.11 | seal enclosure | 1.92h? | 2026-06-05 13:00 A | 2026-06-05 14:55 A |  | 100% | start no earlier than 2026-05-06 08:00 | DUSTIN HOWE [13%]; JACKSON KING [13%] | 0.5h | 0.5h |
| 488 | 8.2.2.12 | place enclosure in the hand hole | 1.92h? | 2026-06-05 13:00 A | 2026-06-05 14:55 A |  | 100% | start no earlier than 2026-05-06 08:00 | DUSTIN HOWE [13%]; JACKSON KING [13%] | 0.5h | 0.5h |
| 489 | 8.2.2.13 | neatly wrap the spare fiber in the hand hole | 1.92h? | 2026-06-05 13:00 A | 2026-06-05 14:55 A |  | 100% | start no earlier than 2026-05-06 08:00 | DUSTIN HOWE [13%]; JACKSON KING [13%] | 0.5h | 0.5h |
| 490 | 8.2.2.14 | place heavy duty lid on hand hole | 1.92h? | 2026-06-05 13:00 A | 2026-06-05 14:55 A |  | 100% | start no earlier than 2026-05-06 08:00 | DUSTIN HOWE [13%]; JACKSON KING [13%] | 0.5h | 0.5h |
| 491 | 8.2.2.15 | Bury the Handhole | 1.92h? | 2026-06-05 13:00 A | 2026-06-05 14:55 A |  | 100% | start no earlier than 2026-05-06 08:00 | DUSTIN HOWE [13%]; JACKSON KING [13%] | 0.5h | 0.5h |
| 492 | 8.2.2.16 | install fiber marker post? | 1.92h? | 2026-06-05 13:00 A | 2026-06-05 14:55 A |  | 100% | start no earlier than 2026-05-06 08:00 | DUSTIN HOWE [13%]; JACKSON KING [13%] | 0.5h | 0.5h |
| 493 | 8.2.3 | **Hand Hole #2** | 0.96d? | 2026-08-14 11:50 A | 2026-08-17 11:32 A | 476 | 100% |  |  | 10.5h | 10.5h |
| 494 | 8.2.3.1 | Locate Hand Hole, may need to coordinate with badlands | 3.85h? | 2026-08-14 11:50 A | 2026-08-14 16:41 A |  | 100% | start no earlier than 2026-05-06 08:00 | DUSTIN HOWE [13%]; JACKSON KING [13%] | 1h | 1h |
| 495 | 8.2.3.2 | HAND DIG up Hand hole remove plywood cover | 3.85h? | 2026-08-14 11:50 A | 2026-08-14 16:41 A |  | 100% | start no earlier than 2026-05-06 08:00 | DUSTIN HOWE [13%]; JACKSON KING [13%] | 1h | 1h |
| 496 | 8.2.3.3 | setup fiber splicing tent and table | 1.92h? | 2026-08-14 11:50 A | 2026-08-14 14:46 A |  | 100% | start no earlier than 2026-05-06 08:00 | DUSTIN HOWE [13%]; JACKSON KING [13%] | 0.5h | 0.5h |
| 497 | 8.2.3.4 | Organize the cables and route into tent | 1.92h? | 2026-08-14 11:50 A | 2026-08-14 14:46 A |  | 100% | start no earlier than 2026-05-06 08:00 | DUSTIN HOWE [13%]; JACKSON KING [13%] | 0.5h | 0.5h |
| 498 | 8.2.3.5 | Strip fiber cable outter jacketing / sheath, use the SAFTEY FIBER stripping tool in the fiber splice kit backpack. Or tubing cutter for armor | 1.92h? | 2026-08-14 11:50 A | 2026-08-14 14:46 A |  | 100% | start no earlier than 2026-05-06 08:00 | DUSTIN HOWE [13%]; JACKSON KING [13%] | 0.5h | 0.5h |
| 499 | 8.2.3.6 | strip the jacket 2 ft back to allow enough room to splice in underground splice box | 1.92h? | 2026-08-14 11:50 A | 2026-08-14 14:46 A |  | 100% | start no earlier than 2026-05-06 08:00 | DUSTIN HOWE [13%]; JACKSON KING [13%] | 0.5h | 0.5h |
| 500 | 8.2.3.7 | use the FUSION splicer to splice like color to like color with the fiber. DON’T FORGET HEAT SHRINK TUBES | 7.69h? | 2026-08-14 11:50 A | 2026-08-17 11:32 A |  | 100% | start no earlier than 2026-05-06 08:00 | DUSTIN HOWE [13%]; JACKSON KING [13%] | 2h | 2h |
| 501 | 8.2.3.8 | put fiber splices in casette, | 1.92h? | 2026-08-14 11:50 A | 2026-08-14 14:46 A |  | 100% | start no earlier than 2026-05-06 08:00 | DUSTIN HOWE [13%]; JACKSON KING [13%] | 0.5h | 0.5h |
| 502 | 8.2.3.9 | wrape individual fibers in casette. | 1.92h? | 2026-08-14 11:50 A | 2026-08-14 14:46 A |  | 100% | start no earlier than 2026-05-06 08:00 | DUSTIN HOWE [13%]; JACKSON KING [13%] | 0.5h | 0.5h |
| 503 | 8.2.3.10 | place casette in underground enclosure ensuring the cables go into the SEALED entrances to the enclosure | 1.92h? | 2026-08-14 11:50 A | 2026-08-14 14:46 A |  | 100% | start no earlier than 2026-05-06 08:00 | DUSTIN HOWE [13%]; JACKSON KING [13%] | 0.5h | 0.5h |
| 504 | 8.2.3.11 | seal enclosure | 1.92h? | 2026-08-14 11:50 A | 2026-08-14 14:46 A |  | 100% | start no earlier than 2026-05-06 08:00 | DUSTIN HOWE [13%]; JACKSON KING [13%] | 0.5h | 0.5h |
| 505 | 8.2.3.12 | place enclosure in the hand hole | 1.92h? | 2026-08-14 11:50 A | 2026-08-14 14:46 A |  | 100% | start no earlier than 2026-05-06 08:00 | DUSTIN HOWE [13%]; JACKSON KING [13%] | 0.5h | 0.5h |
| 506 | 8.2.3.13 | neatly wrap the spare fiber in the hand hole | 1.92h? | 2026-08-14 11:50 A | 2026-08-14 14:46 A |  | 100% | start no earlier than 2026-05-06 08:00 | DUSTIN HOWE [13%]; JACKSON KING [13%] | 0.5h | 0.5h |
| 507 | 8.2.3.14 | place heavy duty lid on hand hole | 1.92h? | 2026-08-14 11:50 A | 2026-08-14 14:46 A |  | 100% | start no earlier than 2026-05-06 08:00 | DUSTIN HOWE [13%]; JACKSON KING [13%] | 0.5h | 0.5h |
| 508 | 8.2.3.15 | Bury the Handhole | 1.92h? | 2026-08-14 11:50 A | 2026-08-14 14:46 A |  | 100% | start no earlier than 2026-05-06 08:00 | DUSTIN HOWE [13%]; JACKSON KING [13%] | 0.5h | 0.5h |
| 509 | 8.2.3.16 | install fiber marker post? | 1.92h? | 2026-08-14 11:50 A | 2026-08-14 14:46 A |  | 100% | start no earlier than 2026-05-06 08:00 | DUSTIN HOWE [13%]; JACKSON KING [13%] | 0.5h | 0.5h |

| ID | WBS | Task | Duration | Start | Finish | Predecessors | Complete | Constraint | Resources | Work | Actual work |
| --- | --- | --- | --- | --- | --- | --- | --- | --- | --- | --- | --- |
| 510 | 8.2.4 | **Hand Hole #3** | 0.96d? | 2026-08-17 11:32 A | 2026-08-18 11:13 A | 493 | 100% |  |  | 10.5h | 10.5h |
| 511 | 8.2.4.1 | Locate Hand Hole, may need to coordinate with badlands | 3.85h? | 2026-08-17 11:32 A | 2026-08-17 16:23 A |  | 100% | start no earlier than 2026-05-06 08:00 | DUSTIN HOWE [13%]; JACKSON KING [13%] | 1h | 1h |
| 512 | 8.2.4.2 | HAND DIG up Hand hole remove plywood cover | 3.85h? | 2026-08-17 11:32 A | 2026-08-17 16:23 A |  | 100% | start no earlier than 2026-05-06 08:00 | DUSTIN HOWE [13%]; JACKSON KING [13%] | 1h | 1h |
| 513 | 8.2.4.3 | setup fiber splicing tent and table | 1.92h? | 2026-08-17 11:32 A | 2026-08-17 14:27 A |  | 100% | start no earlier than 2026-05-06 08:00 | DUSTIN HOWE [13%]; JACKSON KING [13%] | 0.5h | 0.5h |
| 514 | 8.2.4.4 | Organize the cables and route into tent | 1.92h? | 2026-08-17 11:32 A | 2026-08-17 14:27 A |  | 100% | start no earlier than 2026-05-06 08:00 | DUSTIN HOWE [13%]; JACKSON KING [13%] | 0.5h | 0.5h |
| 515 | 8.2.4.5 | Strip fiber cable outter jacketing / sheath, use the SAFTEY FIBER stripping tool in the fiber splice kit backpack. Or tubing cutter for armor | 1.92h? | 2026-08-17 11:32 A | 2026-08-17 14:27 A |  | 100% | start no earlier than 2026-05-06 08:00 | DUSTIN HOWE [13%]; JACKSON KING [13%] | 0.5h | 0.5h |
| 516 | 8.2.4.6 | strip the jacket 2 ft back to allow enough room to splice in underground splice box | 1.92h? | 2026-08-17 11:32 A | 2026-08-17 14:27 A |  | 100% | start no earlier than 2026-05-06 08:00 | DUSTIN HOWE [13%]; JACKSON KING [13%] | 0.5h | 0.5h |
| 517 | 8.2.4.7 | use the FUSION splicer to splice like color to like color with the fiber. DON’T FORGET HEAT SHRINK TUBES | 7.69h? | 2026-08-17 11:32 A | 2026-08-18 11:13 A |  | 100% | start no earlier than 2026-05-06 08:00 | DUSTIN HOWE [13%]; JACKSON KING [13%] | 2h | 2h |
| 518 | 8.2.4.8 | put fiber splices in casette, | 1.92h? | 2026-08-17 11:32 A | 2026-08-17 14:27 A |  | 100% | start no earlier than 2026-05-06 08:00 | DUSTIN HOWE [13%]; JACKSON KING [13%] | 0.5h | 0.5h |
| 519 | 8.2.4.9 | wrape individual fibers in casette. | 1.92h? | 2026-08-17 11:32 A | 2026-08-17 14:27 A |  | 100% | start no earlier than 2026-05-06 08:00 | DUSTIN HOWE [13%]; JACKSON KING [13%] | 0.5h | 0.5h |
| 520 | 8.2.4.10 | place casette in underground enclosure ensuring the cables go into the SEALED entrances to the enclosure | 1.92h? | 2026-08-17 11:32 A | 2026-08-17 14:27 A |  | 100% | start no earlier than 2026-05-06 08:00 | DUSTIN HOWE [13%]; JACKSON KING [13%] | 0.5h | 0.5h |
| 521 | 8.2.4.11 | seal enclosure | 1.92h? | 2026-08-17 11:32 A | 2026-08-17 14:27 A |  | 100% | start no earlier than 2026-05-06 08:00 | DUSTIN HOWE [13%]; JACKSON KING [13%] | 0.5h | 0.5h |
| 522 | 8.2.4.12 | place enclosure in the hand hole | 1.92h? | 2026-08-17 11:32 A | 2026-08-17 14:27 A |  | 100% | start no earlier than 2026-05-06 08:00 | DUSTIN HOWE [13%]; JACKSON KING [13%] | 0.5h | 0.5h |
| 523 | 8.2.4.13 | neatly wrap the spare fiber in the hand hole | 1.92h? | 2026-08-17 11:32 A | 2026-08-17 14:27 A |  | 100% | start no earlier than 2026-05-06 08:00 | DUSTIN HOWE [13%]; JACKSON KING [13%] | 0.5h | 0.5h |
| 524 | 8.2.4.14 | place heavy duty lid on hand hole | 1.92h? | 2026-08-17 11:32 A | 2026-08-17 14:27 A |  | 100% | start no earlier than 2026-05-06 08:00 | DUSTIN HOWE [13%]; JACKSON KING [13%] | 0.5h | 0.5h |
| 525 | 8.2.4.15 | Bury the Handhole | 1.92h? | 2026-08-17 11:32 A | 2026-08-17 14:27 A |  | 100% | start no earlier than 2026-05-06 08:00 | DUSTIN HOWE [13%]; JACKSON KING [13%] | 0.5h | 0.5h |
| 526 | 8.2.4.16 | install fiber marker post? | 1.92h? | 2026-08-17 11:32 A | 2026-08-17 14:27 A |  | 100% | start no earlier than 2026-05-06 08:00 | DUSTIN HOWE [13%]; JACKSON KING [13%] | 0.5h | 0.5h |
| 527 | 8.2.5 | **HandHole #4** | 0.96d? | 2026-08-18 11:13 A | 2026-08-19 10:55 A | 510 | 100% |  |  | 10.5h | 10.5h |
| 528 | 8.2.5.1 | Locate Hand Hole, may need to coordinate with badlands | 3.85h? | 2026-08-18 11:13 A | 2026-08-18 16:04 A |  | 100% | start no earlier than 2026-05-06 08:00 | DUSTIN HOWE [13%]; JACKSON KING [13%] | 1h | 1h |
| 529 | 8.2.5.2 | HAND DIG up Hand hole remove plywood cover | 3.85h? | 2026-08-18 11:13 A | 2026-08-18 16:04 A |  | 100% | start no earlier than 2026-05-06 08:00 | DUSTIN HOWE [13%]; JACKSON KING [13%] | 1h | 1h |
| 530 | 8.2.5.3 | setup fiber splicing tent and table | 1.92h? | 2026-08-18 11:13 A | 2026-08-18 14:09 A |  | 100% | start no earlier than 2026-05-06 08:00 | DUSTIN HOWE [13%]; JACKSON KING [13%] | 0.5h | 0.5h |
| 531 | 8.2.5.4 | Organize the cables and route into tent | 1.92h? | 2026-08-18 11:13 A | 2026-08-18 14:09 A |  | 100% | start no earlier than 2026-05-06 08:00 | DUSTIN HOWE [13%]; JACKSON KING [13%] | 0.5h | 0.5h |
| 532 | 8.2.5.5 | Strip fiber cable outter jacketing / sheath, use the SAFTEY FIBER stripping tool in the fiber splice kit backpack. Or tubing cutter for armor | 1.92h? | 2026-08-18 11:13 A | 2026-08-18 14:09 A |  | 100% | start no earlier than 2026-05-06 08:00 | DUSTIN HOWE [13%]; JACKSON KING [13%] | 0.5h | 0.5h |
| 533 | 8.2.5.6 | strip the jacket 2 ft back to allow enough room to splice in underground splice box | 1.92h? | 2026-08-18 11:13 A | 2026-08-18 14:09 A |  | 100% | start no earlier than 2026-05-06 08:00 | DUSTIN HOWE [13%]; JACKSON KING [13%] | 0.5h | 0.5h |
| 534 | 8.2.5.7 | use the FUSION splicer to splice like color to like color with the fiber. DON’T FORGET HEAT SHRINK TUBES | 7.69h? | 2026-08-18 11:13 A | 2026-08-19 10:55 A |  | 100% | start no earlier than 2026-05-06 08:00 | DUSTIN HOWE [13%]; JACKSON KING [13%] | 2h | 2h |
| 535 | 8.2.5.8 | put fiber splices in casette, | 1.92h? | 2026-08-18 11:13 A | 2026-08-18 14:09 A |  | 100% | start no earlier than 2026-05-06 08:00 | DUSTIN HOWE [13%]; JACKSON KING [13%] | 0.5h | 0.5h |
| 536 | 8.2.5.9 | wrape individual fibers in casette. | 1.92h? | 2026-08-18 11:13 A | 2026-08-18 14:09 A |  | 100% | start no earlier than 2026-05-06 08:00 | DUSTIN HOWE [13%]; JACKSON KING [13%] | 0.5h | 0.5h |
| 537 | 8.2.5.10 | place casette in underground enclosure ensuring the cables go into the SEALED entrances to the enclosure | 1.92h? | 2026-08-18 11:13 A | 2026-08-18 14:09 A |  | 100% | start no earlier than 2026-05-06 08:00 | DUSTIN HOWE [13%]; JACKSON KING [13%] | 0.5h | 0.5h |
| 538 | 8.2.5.11 | seal enclosure | 1.92h? | 2026-08-18 11:13 A | 2026-08-18 14:09 A |  | 100% | start no earlier than 2026-05-06 08:00 | DUSTIN HOWE [13%]; JACKSON KING [13%] | 0.5h | 0.5h |
| 539 | 8.2.5.12 | place enclosure in the hand hole | 1.92h? | 2026-08-18 11:13 A | 2026-08-18 14:09 A |  | 100% | start no earlier than 2026-05-06 08:00 | DUSTIN HOWE [13%]; JACKSON KING [13%] | 0.5h | 0.5h |
| 540 | 8.2.5.13 | neatly wrap the spare fiber in the hand hole | 1.92h? | 2026-08-18 11:13 A | 2026-08-18 14:09 A |  | 100% | start no earlier than 2026-05-06 08:00 | DUSTIN HOWE [13%]; JACKSON KING [13%] | 0.5h | 0.5h |
| 541 | 8.2.5.14 | place heavy duty lid on hand hole | 1.92h? | 2026-08-18 11:13 A | 2026-08-18 14:09 A |  | 100% | start no earlier than 2026-05-06 08:00 | DUSTIN HOWE [13%]; JACKSON KING [13%] | 0.5h | 0.5h |
| 542 | 8.2.5.15 | Bury the Handhole | 1.92h? | 2026-08-18 11:13 A | 2026-08-18 14:09 A |  | 100% | start no earlier than 2026-05-06 08:00 | DUSTIN HOWE [13%]; JACKSON KING [13%] | 0.5h | 0.5h |
| 543 | 8.2.5.16 | install fiber marker post? | 1.92h? | 2026-08-18 11:13 A | 2026-08-18 14:09 A |  | 100% | start no earlier than 2026-05-06 08:00 | DUSTIN HOWE [13%]; JACKSON KING [13%] | 0.5h | 0.5h |

| ID | WBS | Task | Duration | Start | Finish | Predecessors | Complete | Constraint | Resources | Work | Actual work |
| --- | --- | --- | --- | --- | --- | --- | --- | --- | --- | --- | --- |
| 544 | 8.2.6 | **HandHole #5** | 0.96d? | 2026-08-19 10:55 A | 2026-08-20 10:36 A | 527 | 100% |  |  | 10.5h | 10.5h |
| 545 | 8.2.6.1 | Locate Hand Hole, may need to coordinate with badlands | 3.85h? | 2026-08-19 10:55 A | 2026-08-19 15:46 A |  | 100% | start no earlier than 2026-05-06 08:00 | DUSTIN HOWE [13%]; JACKSON KING [13%] | 1h | 1h |
| 546 | 8.2.6.2 | HAND DIG up Hand hole remove plywood cover | 3.85h? | 2026-08-19 10:55 A | 2026-08-19 15:46 A |  | 100% | start no earlier than 2026-05-06 08:00 | DUSTIN HOWE [13%]; JACKSON KING [13%] | 1h | 1h |
| 547 | 8.2.6.3 | setup fiber splicing tent and table | 1.92h? | 2026-08-19 10:55 A | 2026-08-19 13:50 A |  | 100% | start no earlier than 2026-05-06 08:00 | DUSTIN HOWE [13%]; JACKSON KING [13%] | 0.5h | 0.5h |
| 548 | 8.2.6.4 | Organize the cables and route into tent | 1.92h? | 2026-08-19 10:55 A | 2026-08-19 13:50 A |  | 100% | start no earlier than 2026-05-06 08:00 | DUSTIN HOWE [13%]; JACKSON KING [13%] | 0.5h | 0.5h |
| 549 | 8.2.6.5 | Strip fiber cable outter jacketing / sheath, use the SAFTEY FIBER stripping tool in the fiber splice kit backpack. Or tubing cutter for armor | 1.92h? | 2026-08-19 10:55 A | 2026-08-19 13:50 A |  | 100% | start no earlier than 2026-05-06 08:00 | DUSTIN HOWE [13%]; JACKSON KING [13%] | 0.5h | 0.5h |
| 550 | 8.2.6.6 | strip the jacket 2 ft back to allow enough room to splice in underground splice box | 1.92h? | 2026-08-19 10:55 A | 2026-08-19 13:50 A |  | 100% | start no earlier than 2026-05-06 08:00 | DUSTIN HOWE [13%]; JACKSON KING [13%] | 0.5h | 0.5h |
| 551 | 8.2.6.7 | use the FUSION splicer to splice like color to like color with the fiber. DON’T FORGET HEAT SHRINK TUBES | 7.69h? | 2026-08-19 10:55 A | 2026-08-20 10:36 A |  | 100% | start no earlier than 2026-05-06 08:00 | DUSTIN HOWE [13%]; JACKSON KING [13%] | 2h | 2h |
| 552 | 8.2.6.8 | put fiber splices in casette, | 1.92h? | 2026-08-19 10:55 A | 2026-08-19 13:50 A |  | 100% | start no earlier than 2026-05-06 08:00 | DUSTIN HOWE [13%]; JACKSON KING [13%] | 0.5h | 0.5h |
| 553 | 8.2.6.9 | wrape individual fibers in casette. | 1.92h? | 2026-08-19 10:55 A | 2026-08-19 13:50 A |  | 100% | start no earlier than 2026-05-06 08:00 | DUSTIN HOWE [13%]; JACKSON KING [13%] | 0.5h | 0.5h |
| 554 | 8.2.6.10 | place casette in underground enclosure ensuring the cables go into the SEALED entrances to the enclosure | 1.92h? | 2026-08-19 10:55 A | 2026-08-19 13:50 A |  | 100% | start no earlier than 2026-05-06 08:00 | DUSTIN HOWE [13%]; JACKSON KING [13%] | 0.5h | 0.5h |
| 555 | 8.2.6.11 | seal enclosure | 1.92h? | 2026-08-19 10:55 A | 2026-08-19 13:50 A |  | 100% | start no earlier than 2026-05-06 08:00 | DUSTIN HOWE [13%]; JACKSON KING [13%] | 0.5h | 0.5h |
| 556 | 8.2.6.12 | place enclosure in the hand hole | 1.92h? | 2026-08-19 10:55 A | 2026-08-19 13:50 A |  | 100% | start no earlier than 2026-05-06 08:00 | DUSTIN HOWE [13%]; JACKSON KING [13%] | 0.5h | 0.5h |
| 557 | 8.2.6.13 | neatly wrap the spare fiber in the hand hole | 1.92h? | 2026-08-19 10:55 A | 2026-08-19 13:50 A |  | 100% | start no earlier than 2026-05-06 08:00 | DUSTIN HOWE [13%]; JACKSON KING [13%] | 0.5h | 0.5h |
| 558 | 8.2.6.14 | place heavy duty lid on hand hole | 1.92h? | 2026-08-19 10:55 A | 2026-08-19 13:50 A |  | 100% | start no earlier than 2026-05-06 08:00 | DUSTIN HOWE [13%]; JACKSON KING [13%] | 0.5h | 0.5h |
| 559 | 8.2.6.15 | Bury the Handhole | 1.92h? | 2026-08-19 10:55 A | 2026-08-19 13:50 A |  | 100% | start no earlier than 2026-05-06 08:00 | DUSTIN HOWE [13%]; JACKSON KING [13%] | 0.5h | 0.5h |
| 560 | 8.2.6.16 | install fiber marker post? | 1.92h? | 2026-08-19 10:55 A | 2026-08-19 13:50 A |  | 100% | start no earlier than 2026-05-06 08:00 | DUSTIN HOWE [13%]; JACKSON KING [13%] | 0.5h | 0.5h |
| 561 | 8.2.7 | **Hand Hole #6** | 0.96d? | 2026-08-20 10:36 A | 2026-08-21 10:18 A | 544 | 100% |  |  | 10.5h | 10.5h |
| 562 | 8.2.7.1 | Locate Hand Hole, may need to coordinate with badlands | 3.85h? | 2026-08-20 10:36 A | 2026-08-20 15:27 A |  | 100% | start no earlier than 2026-05-06 08:00 | DUSTIN HOWE [13%]; JACKSON KING [13%] | 1h | 1h |
| 563 | 8.2.7.2 | HAND DIG up Hand hole remove plywood cover | 3.85h? | 2026-08-20 10:36 A | 2026-08-20 15:27 A |  | 100% | start no earlier than 2026-05-06 08:00 | DUSTIN HOWE [13%]; JACKSON KING [13%] | 1h | 1h |
| 564 | 8.2.7.3 | setup fiber splicing tent and table | 1.92h? | 2026-08-20 10:36 A | 2026-08-20 13:32 A |  | 100% | start no earlier than 2026-05-06 08:00 | DUSTIN HOWE [13%]; JACKSON KING [13%] | 0.5h | 0.5h |
| 565 | 8.2.7.4 | Organize the cables and route into tent | 1.92h? | 2026-08-20 10:36 A | 2026-08-20 13:32 A |  | 100% | start no earlier than 2026-05-06 08:00 | DUSTIN HOWE [13%]; JACKSON KING [13%] | 0.5h | 0.5h |
| 566 | 8.2.7.5 | Strip fiber cable outter jacketing / sheath, use the SAFTEY FIBER stripping tool in the fiber splice kit backpack. Or tubing cutter for armor | 1.92h? | 2026-08-20 10:36 A | 2026-08-20 13:32 A |  | 100% | start no earlier than 2026-05-06 08:00 | DUSTIN HOWE [13%]; JACKSON KING [13%] | 0.5h | 0.5h |
| 567 | 8.2.7.6 | strip the jacket 2 ft back to allow enough room to splice in underground splice box | 1.92h? | 2026-08-20 10:36 A | 2026-08-20 13:32 A |  | 100% | start no earlier than 2026-05-06 08:00 | DUSTIN HOWE [13%]; JACKSON KING [13%] | 0.5h | 0.5h |
| 568 | 8.2.7.7 | use the FUSION splicer to splice like color to like color with the fiber. DON’T FORGET HEAT SHRINK TUBES | 7.69h? | 2026-08-20 10:36 A | 2026-08-21 10:18 A |  | 100% | start no earlier than 2026-05-06 08:00 | DUSTIN HOWE [13%]; JACKSON KING [13%] | 2h | 2h |
| 569 | 8.2.7.8 | put fiber splices in casette, | 1.92h? | 2026-08-20 10:36 A | 2026-08-20 13:32 A |  | 100% | start no earlier than 2026-05-06 08:00 | DUSTIN HOWE [13%]; JACKSON KING [13%] | 0.5h | 0.5h |
| 570 | 8.2.7.9 | wrape individual fibers in casette. | 1.92h? | 2026-08-20 10:36 A | 2026-08-20 13:32 A |  | 100% | start no earlier than 2026-05-06 08:00 | DUSTIN HOWE [13%]; JACKSON KING [13%] | 0.5h | 0.5h |
| 571 | 8.2.7.10 | place casette in underground enclosure ensuring the cables go into the SEALED entrances to the enclosure | 1.92h? | 2026-08-20 10:36 A | 2026-08-20 13:32 A |  | 100% | start no earlier than 2026-05-06 08:00 | DUSTIN HOWE [13%]; JACKSON KING [13%] | 0.5h | 0.5h |
| 572 | 8.2.7.11 | seal enclosure | 1.92h? | 2026-08-20 10:36 A | 2026-08-20 13:32 A |  | 100% | start no earlier than 2026-05-06 08:00 | DUSTIN HOWE [13%]; JACKSON KING [13%] | 0.5h | 0.5h |
| 573 | 8.2.7.12 | place enclosure in the hand hole | 1.92h? | 2026-08-20 10:36 A | 2026-08-20 13:32 A |  | 100% | start no earlier than 2026-05-06 08:00 | DUSTIN HOWE [13%]; JACKSON KING [13%] | 0.5h | 0.5h |
| 574 | 8.2.7.13 | neatly wrap the spare fiber in the hand hole | 1.92h? | 2026-08-20 10:36 A | 2026-08-20 13:32 A |  | 100% | start no earlier than 2026-05-06 08:00 | DUSTIN HOWE [13%]; JACKSON KING [13%] | 0.5h | 0.5h |
| 575 | 8.2.7.14 | place heavy duty lid on hand hole | 1.92h? | 2026-08-20 10:36 A | 2026-08-20 13:32 A |  | 100% | start no earlier than 2026-05-06 08:00 | DUSTIN HOWE [13%]; JACKSON KING [13%] | 0.5h | 0.5h |
| 576 | 8.2.7.15 | Bury the Handhole | 1.92h? | 2026-08-20 10:36 A | 2026-08-20 13:32 A |  | 100% | start no earlier than 2026-05-06 08:00 | DUSTIN HOWE [13%]; JACKSON KING [13%] | 0.5h | 0.5h |
| 577 | 8.2.7.16 | install fiber marker post? | 1.92h? | 2026-08-20 10:36 A | 2026-08-20 13:32 A |  | 100% | start no earlier than 2026-05-06 08:00 | DUSTIN HOWE [13%]; JACKSON KING [13%] | 0.5h | 0.5h |

| ID | WBS | Task | Duration | Start | Finish | Predecessors | Complete | Constraint | Resources | Work | Actual work |
| --- | --- | --- | --- | --- | --- | --- | --- | --- | --- | --- | --- |
| 578 | 8.2.8 | **Hand Hole #7** | 0.96d? | 2026-08-21 10:18 A | 2026-08-24 09:59 A | 561 | 100% |  |  | 10.5h | 10.5h |
| 579 | 8.2.8.1 | Locate Hand Hole, may need to coordinate with badlands | 3.85h? | 2026-08-21 10:18 A | 2026-08-21 15:09 A |  | 100% | start no earlier than 2026-05-06 08:00 | DUSTIN HOWE [13%]; JACKSON KING [13%] | 1h | 1h |
| 580 | 8.2.8.2 | HAND DIG up Hand hole remove plywood cover | 3.85h? | 2026-08-21 10:18 A | 2026-08-21 15:09 A |  | 100% | start no earlier than 2026-05-06 08:00 | DUSTIN HOWE [13%]; JACKSON KING [13%] | 1h | 1h |
| 581 | 8.2.8.3 | setup fiber splicing tent and table | 1.92h? | 2026-08-21 10:18 A | 2026-08-21 13:13 A |  | 100% | start no earlier than 2026-05-06 08:00 | DUSTIN HOWE [13%]; JACKSON KING [13%] | 0.5h | 0.5h |
| 582 | 8.2.8.4 | Organize the cables and route into tent | 1.92h? | 2026-08-21 10:18 A | 2026-08-21 13:13 A |  | 100% | start no earlier than 2026-05-06 08:00 | DUSTIN HOWE [13%]; JACKSON KING [13%] | 0.5h | 0.5h |
| 583 | 8.2.8.5 | Strip fiber cable outter jacketing / sheath, use the SAFTEY FIBER stripping tool in the fiber splice kit backpack. Or tubing cutter for armor | 1.92h? | 2026-08-21 10:18 A | 2026-08-21 13:13 A |  | 100% | start no earlier than 2026-05-06 08:00 | DUSTIN HOWE [13%]; JACKSON KING [13%] | 0.5h | 0.5h |
| 584 | 8.2.8.6 | strip the jacket 2 ft back to allow enough room to splice in underground splice box | 1.92h? | 2026-08-21 10:18 A | 2026-08-21 13:13 A |  | 100% | start no earlier than 2026-05-06 08:00 | DUSTIN HOWE [13%]; JACKSON KING [13%] | 0.5h | 0.5h |
| 585 | 8.2.8.7 | use the FUSION splicer to splice like color to like color with the fiber. DON’T FORGET HEAT SHRINK TUBES | 7.69h? | 2026-08-21 10:18 A | 2026-08-24 09:59 A |  | 100% | start no earlier than 2026-05-06 08:00 | DUSTIN HOWE [13%]; JACKSON KING [13%] | 2h | 2h |
| 586 | 8.2.8.8 | put fiber splices in casette, | 1.92h? | 2026-08-21 10:18 A | 2026-08-21 13:13 A |  | 100% | start no earlier than 2026-05-06 08:00 | DUSTIN HOWE [13%]; JACKSON KING [13%] | 0.5h | 0.5h |
| 587 | 8.2.8.9 | wrape individual fibers in casette. | 1.92h? | 2026-08-21 10:18 A | 2026-08-21 13:13 A |  | 100% | start no earlier than 2026-05-06 08:00 | DUSTIN HOWE [13%]; JACKSON KING [13%] | 0.5h | 0.5h |
| 588 | 8.2.8.10 | place casette in underground enclosure ensuring the cables go into the SEALED entrances to the enclosure | 1.92h? | 2026-08-21 10:18 A | 2026-08-21 13:13 A |  | 100% | start no earlier than 2026-05-06 08:00 | DUSTIN HOWE [13%]; JACKSON KING [13%] | 0.5h | 0.5h |
| 589 | 8.2.8.11 | seal enclosure | 1.92h? | 2026-08-21 10:18 A | 2026-08-21 13:13 A |  | 100% | start no earlier than 2026-05-06 08:00 | DUSTIN HOWE [13%]; JACKSON KING [13%] | 0.5h | 0.5h |
| 590 | 8.2.8.12 | place enclosure in the hand hole | 1.92h? | 2026-08-21 10:18 A | 2026-08-21 13:13 A |  | 100% | start no earlier than 2026-05-06 08:00 | DUSTIN HOWE [13%]; JACKSON KING [13%] | 0.5h | 0.5h |
| 591 | 8.2.8.13 | neatly wrap the spare fiber in the hand hole | 1.92h? | 2026-08-21 10:18 A | 2026-08-21 13:13 A |  | 100% | start no earlier than 2026-05-06 08:00 | DUSTIN HOWE [13%]; JACKSON KING [13%] | 0.5h | 0.5h |
| 592 | 8.2.8.14 | place heavy duty lid on hand hole | 1.92h? | 2026-08-21 10:18 A | 2026-08-21 13:13 A |  | 100% | start no earlier than 2026-05-06 08:00 | DUSTIN HOWE [13%]; JACKSON KING [13%] | 0.5h | 0.5h |
| 593 | 8.2.8.15 | Bury the Handhole | 1.92h? | 2026-08-21 10:18 A | 2026-08-21 13:13 A |  | 100% | start no earlier than 2026-05-06 08:00 | DUSTIN HOWE [13%]; JACKSON KING [13%] | 0.5h | 0.5h |
| 594 | 8.2.8.16 | install fiber marker post? | 1.92h? | 2026-08-21 10:18 A | 2026-08-21 13:13 A |  | 100% | start no earlier than 2026-05-06 08:00 | DUSTIN HOWE [13%]; JACKSON KING [13%] | 0.5h | 0.5h |
| 595 | 8.2.9 | **Hand Hole #8** | 0.96d? | 2026-08-24 09:59 A | 2026-08-25 09:41 A | 578 | 100% |  |  | 10.5h | 10.5h |
| 596 | 8.2.9.1 | Locate Hand Hole, may need to coordinate with badlands | 3.85h? | 2026-08-24 09:59 A | 2026-08-24 14:50 A |  | 100% | start no earlier than 2026-05-06 08:00 | DUSTIN HOWE [13%]; JACKSON KING [13%] | 1h | 1h |
| 597 | 8.2.9.2 | HAND DIG up Hand hole remove plywood cover | 3.85h? | 2026-08-24 09:59 A | 2026-08-24 14:50 A |  | 100% | start no earlier than 2026-05-06 08:00 | DUSTIN HOWE [13%]; JACKSON KING [13%] | 1h | 1h |
| 598 | 8.2.9.3 | setup fiber splicing tent and table | 1.92h? | 2026-08-24 09:59 A | 2026-08-24 11:55 A |  | 100% | start no earlier than 2026-05-06 08:00 | DUSTIN HOWE [13%]; JACKSON KING [13%] | 0.5h | 0.5h |
| 599 | 8.2.9.4 | Organize the cables and route into tent | 1.92h? | 2026-08-24 09:59 A | 2026-08-24 11:55 A |  | 100% | start no earlier than 2026-05-06 08:00 | DUSTIN HOWE [13%]; JACKSON KING [13%] | 0.5h | 0.5h |
| 600 | 8.2.9.5 | Strip fiber cable outter jacketing / sheath, use the SAFTEY FIBER stripping tool in the fiber splice kit backpack. Or tubing cutter for armor | 1.92h? | 2026-08-24 09:59 A | 2026-08-24 11:55 A |  | 100% | start no earlier than 2026-05-06 08:00 | DUSTIN HOWE [13%]; JACKSON KING [13%] | 0.5h | 0.5h |
| 601 | 8.2.9.6 | strip the jacket 2 ft back to allow enough room to splice in underground splice box | 1.92h? | 2026-08-24 09:59 A | 2026-08-24 11:55 A |  | 100% | start no earlier than 2026-05-06 08:00 | DUSTIN HOWE [13%]; JACKSON KING [13%] | 0.5h | 0.5h |
| 602 | 8.2.9.7 | use the FUSION splicer to splice like color to like color with the fiber. DON’T FORGET HEAT SHRINK TUBES | 7.69h? | 2026-08-24 09:59 A | 2026-08-25 09:41 A |  | 100% | start no earlier than 2026-05-06 08:00 | DUSTIN HOWE [13%]; JACKSON KING [13%] | 2h | 2h |
| 603 | 8.2.9.8 | put fiber splices in casette, | 1.92h? | 2026-08-24 09:59 A | 2026-08-24 11:55 A |  | 100% | start no earlier than 2026-05-06 08:00 | DUSTIN HOWE [13%]; JACKSON KING [13%] | 0.5h | 0.5h |
| 604 | 8.2.9.9 | wrape individual fibers in casette. | 1.92h? | 2026-08-24 09:59 A | 2026-08-24 11:55 A |  | 100% | start no earlier than 2026-05-06 08:00 | DUSTIN HOWE [13%]; JACKSON KING [13%] | 0.5h | 0.5h |
| 605 | 8.2.9.10 | place casette in underground enclosure ensuring the cables go into the SEALED entrances to the enclosure | 1.92h? | 2026-08-24 09:59 A | 2026-08-24 11:55 A |  | 100% | start no earlier than 2026-05-06 08:00 | DUSTIN HOWE [13%]; JACKSON KING [13%] | 0.5h | 0.5h |
| 606 | 8.2.9.11 | seal enclosure | 1.92h? | 2026-08-24 09:59 A | 2026-08-24 11:55 A |  | 100% | start no earlier than 2026-05-06 08:00 | DUSTIN HOWE [13%]; JACKSON KING [13%] | 0.5h | 0.5h |
| 607 | 8.2.9.12 | place enclosure in the hand hole | 1.92h? | 2026-08-24 09:59 A | 2026-08-24 11:55 A |  | 100% | start no earlier than 2026-05-06 08:00 | DUSTIN HOWE [13%]; JACKSON KING [13%] | 0.5h | 0.5h |
| 608 | 8.2.9.13 | neatly wrap the spare fiber in the hand hole | 1.92h? | 2026-08-24 09:59 A | 2026-08-24 11:55 A |  | 100% | start no earlier than 2026-05-06 08:00 | DUSTIN HOWE [13%]; JACKSON KING [13%] | 0.5h | 0.5h |
| 609 | 8.2.9.14 | place heavy duty lid on hand hole | 1.92h? | 2026-08-24 09:59 A | 2026-08-24 11:55 A |  | 100% | start no earlier than 2026-05-06 08:00 | DUSTIN HOWE [13%]; JACKSON KING [13%] | 0.5h | 0.5h |
| 610 | 8.2.9.15 | Bury the Handhole | 1.92h? | 2026-08-24 09:59 A | 2026-08-24 11:55 A |  | 100% | start no earlier than 2026-05-06 08:00 | DUSTIN HOWE [13%]; JACKSON KING [13%] | 0.5h | 0.5h |
| 611 | 8.2.9.16 | install fiber marker post? | 1.92h? | 2026-08-24 09:59 A | 2026-08-24 11:55 A |  | 100% | start no earlier than 2026-05-06 08:00 | DUSTIN HOWE [13%]; JACKSON KING [13%] | 0.5h | 0.5h |

| ID | WBS | Task | Type | Duration | Start | Finish | Predecessors | Complete | Remaining | Total slack | Constraint | Resources | Work | Actual work |
| --- | --- | --- | --- | --- | --- | --- | --- | --- | --- | --- | --- | --- | --- | --- |
| 612 | 8.2.10 | **Hand Hole #9** |  | 0.96d? | 2026-08-25 09:41 A | 2026-08-26 09:22 A | 595 | 100% |  |  |  |  | 10.5h | 10.5h |
| 613 | 8.2.10.1 | Locate Hand Hole, may need to coordinate with badlands |  | 3.85h? | 2026-08-25 09:41 A | 2026-08-25 14:32 A |  | 100% |  |  | start no earlier than 2026-05-06 08:00 | DUSTIN HOWE [13%]; JACKSON KING [13%] | 1h | 1h |
| 614 | 8.2.10.2 | HAND DIG up Hand hole remove plywood cover |  | 3.85h? | 2026-08-25 09:41 A | 2026-08-25 14:32 A |  | 100% |  |  | start no earlier than 2026-05-06 08:00 | DUSTIN HOWE [13%]; JACKSON KING [13%] | 1h | 1h |
| 615 | 8.2.10.3 | setup fiber splicing tent and table |  | 1.92h? | 2026-08-25 09:41 A | 2026-08-25 11:36 A |  | 100% |  |  | start no earlier than 2026-05-06 08:00 | DUSTIN HOWE [13%]; JACKSON KING [13%] | 0.5h | 0.5h |
| 616 | 8.2.10.4 | Organize the cables and route into tent |  | 1.92h? | 2026-08-25 09:41 A | 2026-08-25 11:36 A |  | 100% |  |  | start no earlier than 2026-05-06 08:00 | DUSTIN HOWE [13%]; JACKSON KING [13%] | 0.5h | 0.5h |
| 617 | 8.2.10.5 | Strip fiber cable outter jacketing / sheath, use the SAFTEY FIBER stripping tool in the fiber splice kit backpack. Or tubing cutter for armor |  | 1.92h? | 2026-08-25 09:41 A | 2026-08-25 11:36 A |  | 100% |  |  | start no earlier than 2026-05-06 08:00 | DUSTIN HOWE [13%]; JACKSON KING [13%] | 0.5h | 0.5h |
| 618 | 8.2.10.6 | strip the jacket 2 ft back to allow enough room to splice in underground splice box |  | 1.92h? | 2026-08-25 09:41 A | 2026-08-25 11:36 A |  | 100% |  |  | start no earlier than 2026-05-06 08:00 | DUSTIN HOWE [13%]; JACKSON KING [13%] | 0.5h | 0.5h |
| 619 | 8.2.10.7 | use the FUSION splicer to splice like color to like color with the fiber. DON’T FORGET HEAT SHRINK TUBES |  | 7.69h? | 2026-08-25 09:41 A | 2026-08-26 09:22 A |  | 100% |  |  | start no earlier than 2026-05-06 08:00 | DUSTIN HOWE [13%]; JACKSON KING [13%] | 2h | 2h |
| 620 | 8.2.10.8 | put fiber splices in casette, |  | 1.92h? | 2026-08-25 09:41 A | 2026-08-25 11:36 A |  | 100% |  |  | start no earlier than 2026-05-06 08:00 | DUSTIN HOWE [13%]; JACKSON KING [13%] | 0.5h | 0.5h |
| 621 | 8.2.10.9 | wrape individual fibers in casette. |  | 1.92h? | 2026-08-25 09:41 A | 2026-08-25 11:36 A |  | 100% |  |  | start no earlier than 2026-05-06 08:00 | DUSTIN HOWE [13%]; JACKSON KING [13%] | 0.5h | 0.5h |
| 622 | 8.2.10.10 | place casette in underground enclosure ensuring the cables go into the SEALED entrances to the enclosure |  | 1.92h? | 2026-08-25 09:41 A | 2026-08-25 11:36 A |  | 100% |  |  | start no earlier than 2026-05-06 08:00 | DUSTIN HOWE [13%]; JACKSON KING [13%] | 0.5h | 0.5h |
| 623 | 8.2.10.11 | seal enclosure |  | 1.92h? | 2026-08-25 09:41 A | 2026-08-25 11:36 A |  | 100% |  |  | start no earlier than 2026-05-06 08:00 | DUSTIN HOWE [13%]; JACKSON KING [13%] | 0.5h | 0.5h |
| 624 | 8.2.10.12 | place enclosure in the hand hole |  | 1.92h? | 2026-08-25 09:41 A | 2026-08-25 11:36 A |  | 100% |  |  | start no earlier than 2026-05-06 08:00 | DUSTIN HOWE [13%]; JACKSON KING [13%] | 0.5h | 0.5h |
| 625 | 8.2.10.13 | neatly wrap the spare fiber in the hand hole |  | 1.92h? | 2026-08-25 09:41 A | 2026-08-25 11:36 A |  | 100% |  |  | start no earlier than 2026-05-06 08:00 | DUSTIN HOWE [13%]; JACKSON KING [13%] | 0.5h | 0.5h |
| 626 | 8.2.10.14 | place heavy duty lid on hand hole |  | 1.92h? | 2026-08-25 09:41 A | 2026-08-25 11:36 A |  | 100% |  |  | start no earlier than 2026-05-06 08:00 | DUSTIN HOWE [13%]; JACKSON KING [13%] | 0.5h | 0.5h |
| 627 | 8.2.10.15 | Bury the Handhole |  | 1.92h? | 2026-08-25 09:41 A | 2026-08-25 11:36 A |  | 100% |  |  | start no earlier than 2026-05-06 08:00 | DUSTIN HOWE [13%]; JACKSON KING [13%] | 0.5h | 0.5h |
| 628 | 8.2.10.16 | install fiber marker post? |  | 1.92h? | 2026-08-25 09:41 A | 2026-08-25 11:36 A |  | 100% |  |  | start no earlier than 2026-05-06 08:00 | DUSTIN HOWE [13%]; JACKSON KING [13%] | 0.5h | 0.5h |
| 629 | 8.2.11 | **Fiber Termination at CLR** |  | 6.34d? | 2026-08-26 09:22 A | 2026-09-03 13:07 | 612 | 41% | 3.76d? | 191.49d |  |  | 61.64h | 25.08h |
| 630 | 8.2.11.1 | Put together plan for fiber enclosure |  | 4h? | 2026-08-26 09:22 A | 2026-08-26 14:22 A |  | 100% |  |  | start no earlier than 2026-05-06 08:00 | DUSTIN HOWE [37.5%]; JACKSON KING [37.5%] | 3h | 3h |
| 631 | 8.2.11.2 | determine any supports / raceway needed for fiber cabling / building entries |  | 50.74h? | 2026-08-26 09:22 A | 2026-09-03 13:07 |  | 5% | 48.1h? | 191.49d | start no earlier than 2026-05-06 08:00 | DUSTIN HOWE [38%]; JACKSON KING [38%] | 38.56h | 2h |
| 632 | 8.2.11.3 | Put MTO together and review materials. | milestone | 0h? | 2026-08-26 09:22 A | 2026-08-26 09:22 A |  | 100% |  |  | start no earlier than 2026-05-06 08:00 | DUSTIN HOWE [38%]; JACKSON KING [38%] |  |  |
| 633 | 8.2.11.4 | Sent MTO off for quote and verifiy pricing |  | 2.63h? | 2026-08-26 09:22 A | 2026-08-26 13:00 A |  | 100% |  |  | start no earlier than 2026-05-06 08:00 | DUSTIN HOWE [38%]; JACKSON KING [38%] | 2h | 2h |
| 634 | 8.2.11.5 | Verify plan with customer. |  | 2.63h? | 2026-08-26 09:22 A | 2026-08-26 13:00 A |  | 100% |  |  | start no earlier than 2026-05-06 08:00 | DUSTIN HOWE [38%]; JACKSON KING [38%] | 2h | 2h |
| 635 | 8.2.11.6 | Install any required Raceways, supports, enclosures, |  | 2.63h? | 2026-08-26 09:22 A | 2026-08-26 13:00 A |  | 100% |  |  | start no earlier than 2026-05-06 08:00 | DUSTIN HOWE [38%]; JACKSON KING [38%] | 2h | 2h |
| 636 | 8.2.11.7 | Bring Fiber Cabling into building |  | 5.26h? | 2026-08-26 09:22 A | 2026-08-26 15:38 A |  | 100% |  |  | start no earlier than 2026-05-06 08:00 | DUSTIN HOWE [38%]; JACKSON KING [38%] | 4h | 4h |
| 637 | 8.2.11.8 | strip and splice fiber cabling with correct ends. |  | 5.26h? | 2026-08-26 09:22 A | 2026-08-26 15:38 A |  | 100% |  |  | start no earlier than 2026-05-06 08:00 | DUSTIN HOWE [38%]; JACKSON KING [38%] | 4h | 4h |
| 638 | 8.2.11.9 | cap ends on fiber to ensure clenliness until ready to test |  | 8h? | 2026-08-26 09:22 A | 2026-08-27 09:22 A |  | 100% |  |  | start no earlier than 2026-05-06 08:00 | DUSTIN HOWE [38%]; JACKSON KING [38%] | 6.08h | 6.08h |

| ID | WBS | Task | Duration | Start | Finish | Complete | Remaining | Total slack | Constraint | Deadline | Resources | Work | Actual work |
| --- | --- | --- | --- | --- | --- | --- | --- | --- | --- | --- | --- | --- | --- |
| 639 | 9 | **ONEOK** | 14.5d? | 2026-05-06 08:00 A | 2026-05-26 12:00 | 53% | 6.77d? | 263.5d |  |  |  | 128h | 16h |
| 640 | 9.1 | **GARDEN CREEK C&E** | 14.5d? | 2026-05-06 08:00 A | 2026-05-26 12:00 A | 100% |  |  |  |  |  | 16h | 16h |
| 641 | 9.1.1 | REVIEW DRAWINGS | 8h? | 2026-05-06 08:00 A | 2026-05-13 12:00 A | 100% |  |  | start no earlier than 2026-05-06 08:00 |  | RAMI DOURI [25%]; SETH PETERSON [25%] | 2h | 2h |
| 642 | 9.1.2 | FINNISH FILLING OUT C&E | 32h? | 2026-05-06 08:00 A | 2026-05-19 17:00 A | 100% |  |  | start no earlier than 2026-05-06 08:00 |  | RAMI DOURI [25%]; SETH PETERSON [25%] | 8h | 8h |
| 643 | 9.1.3 | DELIVER MATERIALS TO CUSTOMER | 24h? | 2026-05-06 08:00 A | 2026-05-26 12:00 A | 100% |  |  | start no earlier than 2026-05-06 08:00 |  | RAMI DOURI [25%]; SETH PETERSON [25%] | 6h | 6h |
| 644 | 9.2 | **KEENE STATION C&E** | 1d? | 2026-05-06 08:00 | 2026-05-06 17:00 |  |  | 277d |  |  |  | 112h |  |
| 645 | 9.2.1 | WALKDOWN STATION | 8h? | 2026-05-06 08:00 | 2026-05-06 17:00 |  |  | 277d | start no earlier than 2026-05-06 08:00 |  | RAMI DOURI; SETH PETERSON | 16h |  |
| 646 | 9.2.2 | MARK UP P&ID DRAWINGS | 8h? | 2026-05-06 08:00 | 2026-05-06 17:00 |  |  | 277d | start no earlier than 2026-05-06 08:00 |  | RAMI DOURI; SETH PETERSON | 16h |  |
| 647 | 9.2.3 | <New Task> | 8h? | 2026-05-06 08:00 | 2026-05-06 17:00 |  |  | 277d | start no earlier than 2026-05-06 08:00 |  | RAMI DOURI; SETH PETERSON | 16h |  |
| 648 | 9.2.4 | <New Task> | 8h? | 2026-05-06 08:00 | 2026-05-06 17:00 |  |  | 277d | start no earlier than 2026-05-06 08:00 |  | RAMI DOURI; SETH PETERSON | 16h |  |
| 649 | 9.2.5 | <New Task> | 8h? | 2026-05-06 08:00 | 2026-05-06 17:00 |  |  | 277d | start no earlier than 2026-05-06 08:00 |  | RAMI DOURI; SETH PETERSON | 16h |  |
| 650 | 9.2.6 | <New Task> | 8h? | 2026-05-06 08:00 | 2026-05-06 17:00 |  |  | 277d | start no earlier than 2026-05-06 08:00 |  | RAMI DOURI; SETH PETERSON | 16h |  |
| 651 | 9.2.7 | <New Task> | 8h? | 2026-05-06 08:00 | 2026-05-06 17:00 |  |  | 277d | start no earlier than 2026-05-06 08:00 |  | RAMI DOURI; SETH PETERSON | 16h |  |
| 652 | 10 | **Kinder Morgan POTENTIAL FLOW CPU SALE** | 4d? | 2026-05-06 08:00 | 2026-05-11 17:00 |  |  | 14d |  | 2026-05-31 17:00 |  | 32h |  |
| 653 | 10.1 | Program CHASSIS / AFC MODULE | 8h? | 2026-05-06 08:00 | 2026-05-06 17:00 |  |  | 17d | start no earlier than 2026-05-06 08:00 | 2026-05-31 17:00 | SETH PETERSON | 8h |  |
| 654 | 10.2 | verify connection to flow meter | 8h? | 2026-05-06 08:00 | 2026-05-06 17:00 |  |  | 17d | start no earlier than 2026-05-06 08:00 | 2026-05-31 17:00 | SETH PETERSON | 8h |  |
| 655 | 10.3 | verify if prosoft can donate an AFC module | 8h? | 2026-05-11 08:00 | 2026-05-11 17:00 |  |  | 14d | start no earlier than 2026-05-11 08:00 | 2026-05-31 17:00 | KYLE MERRILL | 8h |  |
| 656 | 10.4 | DEMO for Kinder Morgan | 8h? | 2026-05-06 08:00 | 2026-05-06 17:00 |  |  | 17d | start no earlier than 2026-05-06 08:00 | 2026-05-31 17:00 | KYLE MERRILL | 8h |  |
| 657 | 11 | **ENETK TRAINING** | 1d? | 2026-05-06 08:00 | 2026-05-06 17:00 |  |  | 277d |  |  |  | 4h |  |
| 658 | 11.1 | **Rockwell Automation Success story** | 1d? | 2026-05-06 08:00 | 2026-05-06 17:00 |  |  | 277d |  |  |  |  |  |
| 659 | 11.1.1 | have bruce complete assesments in RAU | 8h? | 2026-05-06 08:00 | 2026-05-06 17:00 |  |  | 277d | start no earlier than 2026-05-06 08:00 |  |  |  |  |
| 660 | 11.1.2 | Submit project application | 8h? | 2026-05-06 08:00 | 2026-05-06 17:00 |  |  | 277d | start no earlier than 2026-05-06 08:00 |  |  |  |  |
| 661 | 11.2 | FIBER SPLICING TRAINING | 8h? | 2026-05-06 08:00 | 2026-05-06 17:00 |  |  | 277d | start no earlier than 2026-05-06 08:00 |  |  | 4h |  |
| 662 | 11.3 | **DELTA V DCS** | 1d? | 2026-05-06 08:00 | 2026-05-06 17:00 |  |  | 277d |  |  |  |  |  |
| 663 | 11.3.1 | BRUCE SPENCER EXCEL COURSE | 8h? | 2026-05-06 08:00 | 2026-05-06 17:00 |  |  | 277d | start no earlier than 2026-05-06 08:00 |  |  |  |  |
| 664 | 11.4 | MERAKI TRAINING? | 8h? | 2026-05-06 08:00 | 2026-05-06 17:00 |  |  | 277d | start no earlier than 2026-05-06 08:00 |  |  |  |  |
| 665 | 12 | KBS Panel builds | 8h? | 2026-05-05 08:00 | 2026-05-05 17:00 |  |  | 278d |  |  |  |  |  |

| ID | WBS | Task | Duration | Start | Finish | Predecessors | Complete | Total slack | Free slack | Constraint | Resources | Work | Actual work | Invoiced | Paid | Unpaid |
| --- | --- | --- | --- | --- | --- | --- | --- | --- | --- | --- | --- | --- | --- | --- | --- | --- |
| 666 | 13 | **WBPC** | 3d? | 2026-05-19 08:00 A | 2026-05-21 17:00 A |  | 100% |  |  |  |  | 48h | 48h |  |  |  |
| 667 | 13.1 | Monday | 8h? | 2026-05-19 08:00 A | 2026-05-19 17:00 A |  | 100% |  |  | start no earlier than 2026-05-19 08:00 | BRUCE SPENCER; KYLE MERRILL | 16h | 16h |  |  |  |
| 668 | 13.2 | Tuesday | 8h? | 2026-05-20 08:00 A | 2026-05-20 17:00 A |  | 100% |  |  | start no earlier than 2026-05-20 08:00 | BRUCE SPENCER; KYLE MERRILL | 16h | 16h |  |  |  |
| 669 | 13.3 | Wensday | 8h? | 2026-05-21 08:00 A | 2026-05-21 17:00 A |  | 100% |  |  | start no earlier than 2026-05-21 08:00 | BRUCE SPENCER; KYLE MERRILL | 16h | 16h |  |  |  |
| 670 | 14 | **City of Dickinson** | 41d? | 2026-05-07 08:00 | 2026-07-02 17:00 |  |  | 0d |  |  |  | 152h |  |  |  |  |
| 671 | 14.1 | **City of Dickinson S.C.A.D.A** | 41d? | 2026-05-07 08:00 | 2026-07-02 17:00 |  |  | 0d |  |  |  | 72h |  |  |  |  |
| 672 | 14.1.1 | **ALARM MESSAGE FORMATTING** | 1d? | 2026-05-07 08:00 | 2026-05-07 17:00 |  |  | 0d |  |  |  | 16h |  |  |  |  |
| 673 | 14.1.1.1 | **EXCEL SPREAD SHEET WITH ALARMS TO REVIEW** | 1d | 2026-05-07 08:00 | 2026-05-07 17:00 |  |  |  |  |  |  | 16h |  |  |  |  |
| 674 | 14.1.1.1.1 | COPY ALARMS OUT OF WONDER WARE / GENERATE ALARM LIST | 8h? | 2026-05-07 08:00 | 2026-05-07 17:00 |  |  | 276d |  | start no earlier than 2026-05-07 08:00 | RAMI DOURI [50%] | 4h |  |  |  |  |
| 675 | 14.1.1.1.2 | SEND LIST TO COD FOR REVIEW | 8h? | 2026-05-07 08:00 | 2026-05-07 17:00 |  |  | 276d |  | start no earlier than 2026-05-07 08:00 | KYLE MERRILL [25%] | 2h |  |  |  |  |
| 676 | 14.1.1.1.3 | VERIFY LIST FORMATTING AND IMPORT INTO WONDERWARE | 8h? | 2026-05-07 08:00 | 2026-05-07 17:00 |  |  | 276d |  | start no earlier than 2026-05-07 08:00 | BRUCE SPENCER [25%] | 2h |  |  |  |  |
| 677 | 14.1.1.1.4 | PROGRAMM SMS / CALLS | 8h? | 2026-05-07 08:00 | 2026-05-07 17:00 |  |  | 276d |  | start no earlier than 2026-05-07 08:00 | BRUCE SPENCER [25%] | 2h |  |  |  |  |
| 678 | 14.1.1.1.5 | ASSIGN TO OPERATORS | 8h? | 2026-05-07 08:00 | 2026-05-07 17:00 |  |  | 276d |  | start no earlier than 2026-05-07 08:00 | BRUCE SPENCER [37.5%] | 3h |  |  |  |  |
| 679 | 14.1.1.1.6 | VERIFY OPS RECIEVES CALLS. | 8h? | 2026-05-07 08:00 | 2026-05-07 17:00 |  |  | 276d |  | start no earlier than 2026-05-07 08:00 | BRUCE SPENCER [37.5%] | 3h |  |  |  |  |
| 680 | 14.1.2 | **WTP SCREENS** | 41d? | 2026-05-07 08:00 | 2026-07-02 17:00 |  |  | 7d |  |  |  | 56h |  |  |  |  |
| 681 | 14.1.2.1 | VERIFY OPC UA CONNECTION TO PLANT | 8h? | 2026-05-07 08:00 | 2026-05-07 17:00 |  |  | 276d |  | start no earlier than 2026-05-07 08:00 | RAMI DOURI [50%] | 4h |  |  |  |  |
| 682 | 14.1.2.2 | **BUILD OVERVIEW SCREEN** | 0.5d? | 2026-05-18 08:00 | 2026-07-02 17:00 |  |  |  |  |  |  | 4h |  |  |  |  |
| 683 | 14.1.2.2.1 | REVIEW WITH COD | 4h? | 2026-05-20 08:00 | 2026-05-20 12:00 |  |  | 267.5d |  | start no earlier than 2026-05-20 08:00 | BRUCE SPENCER | 4h |  |  |  |  |
| 684 | 14.1.2.3 | **BUILD WTP PAGES** | 6.75d? | 2026-05-19 08:00 | 2026-06-30 17:00 |  |  |  |  |  |  | 48h |  |  |  |  |
| 685 | 14.1.2.3.1 | ADDING IMAGE OF PROCESS OVERVIEW | 8h? | 2026-05-19 08:00 | 2026-05-19 17:00 |  |  | 262.25d | 0d | start no earlier than 2026-05-19 08:00 | BRUCE SPENCER [25%] | 2h |  |  |  |  |
| 686 | 14.1.2.3.2 | ADDING ISNTRUMENTATION | 16h? | 2026-05-20 08:00 | 2026-05-21 17:00 | 685 |  | 262.25d | 0d | start no earlier than 2026-05-07 08:00 | BRUCE SPENCER | 16h |  |  |  |  |
| 687 | 14.1.2.3.3 | ADDING ALARMS | 30h? | 2026-05-22 08:00 | 2026-05-27 15:00 | 686 |  | 262.25d |  | start no earlier than 2026-05-07 08:00 | BRUCE SPENCER | 30h |  |  |  |  |
| 688 | 14.2 | **TOWERS / LIFT STATIONS** | 32d? | 2026-05-11 08:00 | 2026-06-23 17:00 |  |  | 243d |  |  |  | 80h |  |  |  |  |
| 689 | 14.2.1 | FORMATTING | 40h? | 2026-06-17 08:00 | 2026-06-23 17:00 |  |  | 243d |  | start no earlier than 2026-06-17 08:00 | BRUCE SPENCER | 40h |  |  |  |  |
| 690 | 14.2.2 | FUNCTIONALITY | 40h? | 2026-05-11 08:00 | 2026-05-15 17:00 |  |  | 270d |  | finish no earlier than 2026-05-15 17:00 | BRUCE SPENCER | 40h |  |  |  |  |
| 691 | 15 | PH TANK GAUGING | 8h? | 2026-05-12 08:00 | 2026-05-12 17:00 |  |  | 273d |  | start no earlier than 2026-05-12 08:00 |  |  |  | 2,809,600.4 | 2,016,973.73 | 792,626.65 |

| ID | WBS | Task | Duration | Start | Finish | Total slack | Constraint | Work |
| --- | --- | --- | --- | --- | --- | --- | --- | --- |
| 692 | 16 | **KBS** | 1d? | 2026-05-22 08:00 | 2026-05-22 17:00 | 265d |  | 120h |
| 693 | 16.1 | **EDGE DEVICE PANELS** | 1d? | 2026-05-22 08:00 | 2026-05-22 17:00 | 265d |  | 120h |
| 694 | 16.1.1 | EDGE DEVICE PANEL 1 | 8h? | 2026-05-22 08:00 | 2026-05-22 17:00 | 265d | start no earlier than 2026-05-22 08:00 | 4h |
| 695 | 16.1.2 | EDGE DEVICE PANEL 2 | 8h? | 2026-05-22 08:00 | 2026-05-22 17:00 | 265d | start no earlier than 2026-05-22 08:00 | 4h |
| 696 | 16.1.3 | EDGE DEVICE PANEL 3 | 8h? | 2026-05-22 08:00 | 2026-05-22 17:00 | 265d | start no earlier than 2026-05-22 08:00 | 4h |
| 697 | 16.1.4 | EDGE DEVICE PANEL 4 | 8h? | 2026-05-22 08:00 | 2026-05-22 17:00 | 265d | start no earlier than 2026-05-22 08:00 | 4h |
| 698 | 16.1.5 | EDGE DEVICE PANEL 5 | 8h? | 2026-05-22 08:00 | 2026-05-22 17:00 | 265d | start no earlier than 2026-05-22 08:00 | 4h |
| 699 | 16.1.6 | EDGE DEVICE PANEL 6 | 8h? | 2026-05-22 08:00 | 2026-05-22 17:00 | 265d | start no earlier than 2026-05-22 08:00 | 4h |
| 700 | 16.1.7 | EDGE DEVICE PANEL 7 | 8h? | 2026-05-22 08:00 | 2026-05-22 17:00 | 265d | start no earlier than 2026-05-22 08:00 | 4h |
| 701 | 16.1.8 | EDGE DEVICE PANEL 8 | 8h? | 2026-05-22 08:00 | 2026-05-22 17:00 | 265d | start no earlier than 2026-05-22 08:00 | 4h |
| 702 | 16.1.9 | EDGE DEVICE PANEL 9 | 8h? | 2026-05-22 08:00 | 2026-05-22 17:00 | 265d | start no earlier than 2026-05-22 08:00 | 4h |
| 703 | 16.1.10 | EDGE DEVICE PANEL 10 | 8h? | 2026-05-22 08:00 | 2026-05-22 17:00 | 265d | start no earlier than 2026-05-22 08:00 | 4h |
| 704 | 16.1.11 | EDGE DEVICE PANEL 11 | 8h? | 2026-05-22 08:00 | 2026-05-22 17:00 | 265d | start no earlier than 2026-05-22 08:00 | 4h |
| 705 | 16.1.12 | EDGE DEVICE PANEL 12 | 8h? | 2026-05-22 08:00 | 2026-05-22 17:00 | 265d | start no earlier than 2026-05-22 08:00 | 4h |
| 706 | 16.1.13 | EDGE DEVICE PANEL 13 | 8h? | 2026-05-22 08:00 | 2026-05-22 17:00 | 265d | start no earlier than 2026-05-22 08:00 | 4h |
| 707 | 16.1.14 | EDGE DEVICE PANEL 14 | 8h? | 2026-05-22 08:00 | 2026-05-22 17:00 | 265d | start no earlier than 2026-05-22 08:00 | 4h |
| 708 | 16.1.15 | EDGE DEVICE PANEL 15 | 8h? | 2026-05-22 08:00 | 2026-05-22 17:00 | 265d | start no earlier than 2026-05-22 08:00 | 4h |
| 709 | 16.1.16 | EDGE DEVICE PANEL 16 | 8h? | 2026-05-22 08:00 | 2026-05-22 17:00 | 265d | start no earlier than 2026-05-22 08:00 | 4h |
| 710 | 16.1.17 | EDGE DEVICE PANEL 17 | 8h? | 2026-05-22 08:00 | 2026-05-22 17:00 | 265d | start no earlier than 2026-05-22 08:00 | 4h |
| 711 | 16.1.18 | EDGE DEVICE PANEL 18 | 8h? | 2026-05-22 08:00 | 2026-05-22 17:00 | 265d | start no earlier than 2026-05-22 08:00 | 4h |
| 712 | 16.1.19 | EDGE DEVICE PANEL 19 | 8h? | 2026-05-22 08:00 | 2026-05-22 17:00 | 265d | start no earlier than 2026-05-22 08:00 | 4h |
| 713 | 16.1.20 | EDGE DEVICE PANEL 20 | 8h? | 2026-05-22 08:00 | 2026-05-22 17:00 | 265d | start no earlier than 2026-05-22 08:00 | 4h |
| 714 | 16.1.21 | EDGE DEVICE PANEL 21 | 8h? | 2026-05-22 08:00 | 2026-05-22 17:00 | 265d | start no earlier than 2026-05-22 08:00 | 4h |
| 715 | 16.1.22 | EDGE DEVICE PANEL 22 | 8h? | 2026-05-22 08:00 | 2026-05-22 17:00 | 265d | start no earlier than 2026-05-22 08:00 | 4h |
| 716 | 16.1.23 | EDGE DEVICE PANEL 23 | 8h? | 2026-05-22 08:00 | 2026-05-22 17:00 | 265d | start no earlier than 2026-05-22 08:00 | 4h |
| 717 | 16.1.24 | EDGE DEVICE PANEL 24 | 8h? | 2026-05-22 08:00 | 2026-05-22 17:00 | 265d | start no earlier than 2026-05-22 08:00 | 4h |
| 718 | 16.1.25 | EDGE DEVICE PANEL 25 | 8h? | 2026-05-22 08:00 | 2026-05-22 17:00 | 265d | start no earlier than 2026-05-22 08:00 | 4h |
| 719 | 16.1.26 | EDGE DEVICE PANEL 26 | 8h? | 2026-05-22 08:00 | 2026-05-22 17:00 | 265d | start no earlier than 2026-05-22 08:00 | 4h |
| 720 | 16.1.27 | EDGE DEVICE PANEL 27 | 8h? | 2026-05-22 08:00 | 2026-05-22 17:00 | 265d | start no earlier than 2026-05-22 08:00 | 4h |
| 721 | 16.1.28 | EDGE DEVICE PANEL 28 | 8h? | 2026-05-22 08:00 | 2026-05-22 17:00 | 265d | start no earlier than 2026-05-22 08:00 | 4h |
| 722 | 16.1.29 | EDGE DEVICE PANEL 29 | 8h? | 2026-05-22 08:00 | 2026-05-22 17:00 | 265d | start no earlier than 2026-05-22 08:00 | 4h |
| 723 | 16.1.30 | EDGE DEVICE PANEL 30 | 8h? | 2026-05-22 08:00 | 2026-05-22 17:00 | 265d | start no earlier than 2026-05-22 08:00 | 4h |
